# PRD2018-G12-甘特图10

Schedule from MS Project, 2018-09-19 to 2019-02-11, status date 2018-10-30, 5 hours a day, A marks actual dates.
HP

## Calendars

- 需求项目日历: Mon-Sat 19:00-20:00; Sun off. Exceptions (off unless hours are given): 2018-10-01 to 2018-10-06 (国庆假期), 2018-10-07 18:00-19:30 (第一次团建), 2018-11-19 13:00-14:00, 19:00-20:00 (第一次访谈前的准备), 2018-11-25 09:30-10:30 (访谈1), 2018-11-29 15:00-16:30, 19:00-20:00, 21:00-23:59 (需求计划评审1), 2018-12-01 10:00-12:00, 19:00-20:00 (第2次访谈前准备), 2018-12-03 19:00-23:00 (c), 2018-12-04 17:30-18:00, 19:00-20:00 (访谈2), 2018-12-07 19:00-21:00 (需求计划重评), 2018-12-23 09:00-10:00 (建立变更控制委员会), 2018-12-26 08:00-11:00, 19:00-20:00 (需求规格说明评审), 2019-01-02 08:00-11:00 (变更控制文档评审).

## Resources

| Resource |
| --- |
| 蓝舒雯 |
| 刘祺 |
| 赵佳锋 |
| 陈铭阳 |
| 赵唯皓 |

## Schedule

| ID | WBS | Task | Type | Duration | Start | Finish | Predecessors | Complete | Remaining | Actual start | Actual finish | Resources | Work | Actual work | 最终交付物 |
| --- | --- | --- | --- | --- | --- | --- | --- | --- | --- | --- | --- | --- | --- | --- | --- |
| 1 | * | **软件工程系列课程教学辅助网站-需求工程项目** |  | 28.9d | 2018-09-19 08:00 | 2019-01-16 17:00 |  | 33% | 19.49d | 2018-09-19 19:00 |  |  | 289.63h | 88.32h |  |
| 2 | *.1 | **项目启动** |  | 1d | 2018-09-19 19:00 A | 2018-09-23 20:00 |  | 100% |  |  | 2018-09-22 20:00 |  | 9h | 9h |  |
| 3 | *.1.1 | 确定小组人员并成立G12小组 | manual | 0.4d | 2018-09-19 19:00 A | 2018-09-20 20:00 A |  | 100% |  |  |  | 赵佳锋; 蓝舒雯; 刘祺; 陈铭阳; 赵唯皓 | 5h | 5h | 《G12小组成员信息》 |
| 4 | *.1.4 | 项目任务书下达 | manual | 0.2d | 2018-09-20 19:00 A | 2018-09-20 20:00 A | 3 | 100% |  |  |  |  |  |  |  |
| 5 | 1.1.3 | 安装配置管理工具 | manual | 0.4d | 2018-09-21 19:00 A | 2018-09-22 20:00 A | 4 | 100% |  |  |  | 赵佳锋; 陈铭阳 | 2h | 2h |  |
| 6 | 1.1.4 | logo设计 | manual | 0.4d | 2018-09-21 19:00 A | 2018-09-22 20:00 A | 4 | 100% |  |  |  | 蓝舒雯 | 2h | 2h | logo |
| 7 | 1.2 | **知识储备** |  | 18d | 2018-10-08 19:00 A | 2018-12-23 20:00 |  | 28% | 12.92d |  |  |  | 60.34h | 16.84h |  |
| 8 | 1.2.1 | **UML概述** |  | 1.4d | 2018-10-08 19:00 A | 2018-10-14 20:00 |  | 100% |  |  | 2018-10-13 20:00 |  | 4.86h | 4.86h | 翻转1ppt |
| 9 | 1.2.1.1 | PPT1-4部分 | manual | 0.2d | 2018-10-08 19:00 A | 2018-10-10 20:00 A |  | 100% |  |  |  | 赵佳锋 | 1h | 1h | 《部分ppt资料》 |
| 10 | 1.2.1.2 | PPT 第5部分 | manual | 0.6d | 2018-10-08 19:00 A | 2018-10-10 20:00 A |  | 100% |  |  |  | 蓝舒雯 | 0.38h | 0.38h | 《部分ppt资料》 |
| 11 | 1.2.1.3 | PPT 第6部分 | manual | 0.6d | 2018-10-08 19:00 A | 2018-10-10 20:00 A |  | 100% |  |  |  | 赵唯皓 | 0.48h | 0.48h | 《部分ppt资料》 |
| 12 | 1.2.1.4 | PPT 第7部分 | milestone, manual | 0d | 2018-10-08 19:00 A | 2018-10-10 19:00 |  | 100% |  |  | 2018-10-09 20:00 | 陈铭阳 |  |  | 《部分ppt资料》 |
| 13 | 1.2.1.5 | PPT第8部分 | manual | 0.4d | 2018-10-09 19:00 A | 2018-10-10 20:00 A |  | 100% |  |  |  | 刘祺 | 2h | 2h | 《部分ppt资料》 |
| 14 | 1.2.1.6 | 整合制成PPt | milestone, manual | 0d | 2018-10-12 19:00 A | 2018-10-12 20:00 | 9, 10, 11, 12, 13 | 100% |  |  | 2018-10-13 20:00 | 赵佳锋 | 1h | 1h |  |
| 15 | 1.2.1.7 | 审核检查 | milestone, manual | 0d | 2018-10-13 19:00 A | 2018-10-13 19:00 A | 14 | 100% |  |  |  | 刘祺 |  |  |  |
| 16 | 1.2.2 | **UML工具** |  | 1.4d | 2018-10-15 19:00 A | 2018-10-21 20:00 | 8 | 100% |  |  | 2018-11-08 20:00 |  | 3.28h | 3.28h | 翻转2ppt |
| 17 | 1.2.2.1 | PPT 第1部分资料收集 | manual | 0.4d | 2018-10-15 19:00 A | 2018-10-16 20:00 A |  | 100% |  |  |  | 蓝舒雯 | 0.14h | 0.14h | 《部分ppt资料》 |
| 18 | 1.2.2.2 | PPT 2-5部分资料收集 | milestone, manual | 0d | 2018-10-15 19:00 A | 2018-10-16 20:00 | 17FF, 20FF, 21FF, 22FF | 100% |  |  | 2018-11-08 20:00 | 赵佳锋 | 2h | 2h | 《部分ppt资料》 |
| 19 | 1.2.2.3 | PPT资料整合及审核 | manual | 0.2d | 2018-10-20 19:00 A | 2018-10-20 20:00 A | 18, 17, 20, 21, 22 | 100% |  |  |  | 赵佳锋 | 1h | 1h |  |
| 20 | 1.2.2.4 | PPT 第6部分资料收集 | milestone, manual | 0d | 2018-10-15 19:00 A | 2018-10-16 19:00 |  | 100% |  |  | 2018-10-15 20:00 | 陈铭阳 |  |  | 《部分ppt资料》 |
| 21 | 1.2.2.5 | PPT 第7部分资料收集 | milestone, manual | 0d | 2018-10-15 19:00 A | 2018-10-16 19:00 |  | 100% |  |  | 2018-10-15 20:00 | 刘祺 |  |  | 《部分ppt资料》 |
| 22 | 1.2.2.6 | PPT 第8部分资料收集 | manual | 0.4d | 2018-10-15 19:00 A | 2018-10-16 20:00 A |  | 100% |  |  |  | 赵唯皓 | 0.14h | 0.14h |  |
| 23 | 1.2.3 | **UML基础1** |  | 1.4d | 2018-10-22 19:00 A | 2018-10-28 20:00 | 16 | 100% |  |  | 2018-10-26 20:00 |  | 3.71h | 3.71h | 翻转3ppt |
| 24 | 1.2.3.1 | PPT 第2部分 | manual | 0.1d | 2018-10-22 19:00 A | 2018-10-22 20:00 A |  | 100% |  |  |  | 刘祺 | 0.5h | 0.5h | 《部分ppt资料》 |
| 25 | 1.2.3.2 | PPT 第3部分 | manual | 0.2d | 2018-10-22 19:00 A | 2018-10-22 20:00 A |  | 100% |  |  |  | 蓝舒雯 | 0.07h | 0.07h | 《部分ppt资料》 |
| 26 | 1.2.3.3 | PPT 第4部分 | manual | 0.2d | 2018-10-22 19:00 A | 2018-10-23 19:00 |  | 100% |  |  | 2018-10-22 20:00 | 陈铭阳 | 1h | 1h | 《部分ppt资料》 |
| 27 | 1.2.3.4 | PPT 第7部分 | manual | 0.4d | 2018-10-22 19:00 A | 2018-10-23 20:00 A |  | 100% |  |  |  | 赵唯皓 | 0.14h | 0.14h | 《部分ppt资料》 |
| 28 | 1.2.3.5 | PPT 1、5、6、8、9部分 | manual | 0.2d | 2018-10-23 19:00 A | 2018-10-23 20:00 A |  | 100% |  |  |  | 赵佳锋 | 1h | 1h | ppt初步 |
| 29 | 1.2.3.6 | PPT整合及审核 | manual | 0.2d | 2018-10-26 19:00 A | 2018-10-26 20:00 A | 28, 24, 25, 26, 27 | 100% |  |  |  | 赵佳锋 | 1h | 1h |  |

| ID | WBS | Task | Type | Duration | Start | Finish | Predecessors | Complete | Remaining | Constraint | Resources | Work | Actual work | 最终交付物 |
| --- | --- | --- | --- | --- | --- | --- | --- | --- | --- | --- | --- | --- | --- | --- |
| 30 | 1.2.4 | **UML基础2** |  | 1.4d | 2018-10-29 19:00 A | 2018-11-04 20:00 | 23 | 83% | 0.23d |  |  | 6h | 5h |  |
| 31 | 1.2.4.1 | 修改翻转pptUML基础1 | milestone, manual | 0d | 2018-10-29 19:00 A | 2018-10-29 20:00 A | 28 | 100% |  |  | 刘祺 |  |  |  |
| 32 | 1.2.4.2 | 「原型的定义和动机」部分 | manual | 0.2d | 2018-10-30 19:00 A | 2018-10-30 20:00 A | 31 | 100% |  |  | 刘祺 | 1h | 1h | 「原型的定义和动机」部分PPT资料 |
| 33 | 1.2.4.3 | 「原型成功的因素」和「原型界面介绍」部分PPt资料 | manual | 0.4d | 2018-10-30 19:00 A | 2018-10-31 20:00 A | 31 | 100% |  |  | 蓝舒雯 | 2h | 2h | 「原型成功的因素」和「原型界面介绍」部分 |
| 34 | 1.2.4.4 | 「原型风险」部分 | manual | 0.4d | 2018-10-30 19:00 A | 2018-10-31 20:00 A | 31 | 100% |  |  | 赵唯皓 | 2h | 2h | 「原型风险」部分PPT资料 |
| 35 | 1.2.4.5 | 「原型的使用和评估」部分 | manual | 0.2d | 2018-10-30 19:00 A | 2018-11-01 20:00 | 31 |  | 0.2d |  | 陈铭阳 | 1h |  | 「原型的使用和评估」部分PPt资料 |
| 36 | 1.2.4.6 | 「原型的未来用途和形式」和「Axure RP的界面和使用」部分 | milestone, manual | 0d | 2018-10-30 19:00 A | 2018-10-31 20:00 A | 31 | 100% |  |  | 赵佳锋 |  |  | 「原型的未来用途和形式」和「Axure RP的界面和使用」部分PPt资料 |
| 37 | 1.2.4.7 | PPT整合 | milestone, manual | 0d | 2018-11-02 19:00 A | 2018-11-02 20:00 A | 32, 33, 34, 35, 36 | 100% |  |  | 赵佳锋 |  |  | 第四次翻转ppt-UML学习基础2起草 |
| 38 | 1.2.4.8 | PPt小组内审核及修改 | milestone, manual | 0d | 2018-11-03 19:00 A | 2018-11-03 20:00 A | 37 | 100% |  |  | 刘祺 |  |  | 第四次翻转ppt-UML学习基础2审核版 |
| 39 | 1.2.5 | **UML基础3** |  | 4.2d | 2018-12-07 08:00 | 2018-12-08 08:00 | 30 |  |  |  |  | 42.5h |  |  |
| 40 | 1.2.5.1 | 搜集第一部分和第三部分资料 | manual | 1.7d | 2018-12-03 19:00 | 2018-12-05 22:00 |  |  |  |  | 赵唯皓 | 8.5h |  |  |
| 41 | 1.2.5.2 | 搜集第二部分资料 | manual | 1.7d | 2018-12-03 19:00 | 2018-12-05 22:00 |  |  |  |  | 赵佳锋 | 8.5h |  |  |
| 42 | 1.2.5.3 | PPT第一部分及汇总和审核 | manual | 1.7d | 2018-12-03 19:00 | 2018-12-05 22:00 | 40FF, 41FF, 43FF, 44FF |  |  | start no earlier than 2018-12-03 19:00 | 陈铭阳 | 8.5h |  |  |
| 43 | 1.2.5.4 | PPT第二部分 | manual | 1.7d | 2018-12-03 19:00 | 2018-12-05 22:00 |  |  |  | start no earlier than 2018-12-03 19:00 | 刘祺 | 8.5h |  |  |
| 44 | 1.2.5.5 | PPT第三部分 | manual | 1.7d | 2018-12-03 19:00 | 2018-12-05 22:00 |  |  |  |  | 蓝舒雯 | 8.5h |  | 翻转5ppt |
| 45 | 1.2.6 | **UML基础4** |  | 6.8d | 2018-12-10 08:00 | 2018-12-16 17:00 | 39 |  |  |  |  |  |  |  |
| 46 | 1.2.6.1 | 制作ppt | manual | 5.8d | 2018-12-10 08:00 | 2018-12-26 11:00 |  |  |  |  |  |  |  | 翻转6ppt |
| 47 | 1.3 | **项目计划** |  | 5.3d | 2018-09-24 19:00 A | 2018-10-28 20:00 | 2 | 67% | 1.77d |  |  | 26.98h | 17.98h |  |
| 48 | 1.3.1 | **《可行性分析报告》编写和修订** |  | 1.4d | 2018-09-24 19:00 A | 2018-09-30 20:00 |  |  | 1.4d |  |  | 5h |  |  |
| 49 | 1.3.1.1 | 寻找《可行性分析报告》模板 | manual | 0.2d | 2018-09-24 19:00 A | 2018-09-24 20:00 |  |  | 0.2d |  | 刘祺 | 1h |  | 《可行性分析报告》模板 |
| 50 | 1.3.1.2 | 编写《可行性分析报告》 | manual | 0.4d | 2018-09-25 19:00 A | 2018-09-26 20:00 | 49 |  | 0.4d |  | 赵唯皓 | 2h |  | 《可行性分析报告》初稿 |
| 51 | 1.3.1.3 | 《可行性分析报告》的组内审查修改 | manual | 0.2d | 2018-09-29 19:00 A | 2018-09-29 20:00 | 50 |  | 0.2d |  | 陈铭阳 | 1h |  | 《可行性分析报告》修订版 |
| 52 | 1.3.1.4 | 《可行性分析报告》修订 | manual | 0.2d | 2018-12-01 19:00 A | 2018-12-01 20:00 | 51 |  | 0.2d |  | 赵唯皓 | 1h |  |  |
| 53 | 1.3.2 | **《需求工程项目计划》的编写和修订** |  | 12.4d | 2018-09-24 19:00 A | 2018-12-01 11:00 |  | 89% | 1.38d |  |  | 17.98h | 15.98h |  |
| 54 | 1.3.2.1 | 找寻《项目计划》模板 | manual | 0.2d | 2018-09-24 19:00 A | 2018-09-24 20:00 A |  | 100% |  |  | 陈铭阳 | 1h | 1h | 《项目计划》模板 |
| 55 | 1.3.2.2 | WBS、OBS的绘制 | manual | 0.2d | 2018-09-25 19:00 A | 2018-09-26 20:00 A | 54 | 100% |  | start no earlier than 2018-09-25 19:00 | 蓝舒雯 | 1h | 1h | WBS、OBS |
| 56 | 1.3.2.3 | 制定《需求工程项目计划》第一部分 | manual | 0.4d | 2018-09-25 19:00 A | 2018-09-26 20:00 | 54 | 50% | 0.2d |  | 赵佳锋 | 2h | 1h | 《需求工程项目计划》初稿 |
| 57 | *.1.8 | 制定《需求工程项目计划》第二部分 | manual | 0.2d | 2018-09-28 19:30 | 2018-09-29 19:30 | 54 |  |  |  | 赵佳锋 | 1h |  | 《需求工程项目计划》初稿 |
| 58 | *.1.9 | 修订《需求工程项目计划》 | manual | 0.2d | 2018-09-29 19:00 A | 2018-09-29 20:00 A | 56, 57 | 100% |  |  | 赵唯皓 | 1h | 1h | 《需求工程项目计划》终稿 |
| 59 | 1.3.2.6 | 第一次修订需求工程计划 | manual | 0.2d | 2018-11-02 19:00 A | 2018-11-02 20:00 A | 58 | 100% |  |  | 赵唯皓 | 1h | 1h | 修订记录 |
| 60 | 1.3.2.7 | 审核第一次修订后的需求工程计划 | manual | 0.2d | 2018-11-03 19:00 A | 2018-11-03 20:00 A | 59 | 100% |  |  | 陈铭阳 | 1h | 1h | 《需求工程计划》修订V1 |
| 61 | 1.3.2.8 | 第二次修订需求工程计划 | manual | 0.2d | 2018-11-09 19:00 A | 2018-11-12 20:00 A | 60 | 100% |  |  | 陈铭阳 | 1h | 1h | 修订记录 |
| 62 | 1.3.2.9 | 审核第二次修订后的需求工程计划 | manual | 0.2d | 2018-11-10 19:00 A | 2018-11-12 20:00 A | 61 | 100% |  |  | 赵唯皓 | 1h | 1h | 《需求工程计划》修订V2 |
| 63 | 1.3.2.10 | 第三次修订需求工程计划 | manual | 0.2d | 2018-11-16 19:00 A | 2018-11-16 20:00 A | 62 | 100% |  |  | 赵唯皓 | 1h | 1h | 修订记录 |
| 64 | 1.3.2.11 | 审核第三次修订后的需求工程计划 | manual | 0.2d | 2018-11-17 19:00 A | 2018-11-17 20:00 A | 63 | 100% |  |  | 陈铭阳 | 1h | 1h | 《需求工程计划》修订V3 |
| 65 | 1.3.2.12 | 修订WBS | manual | 0.2d | 2018-11-16 19:00 A | 2018-11-16 20:00 A | 55 | 100% |  |  | 蓝舒雯 | 1h | 1h | WBS |
| 66 | 1.3.2.13 | 修订OBS | manual | 0.2d | 2018-11-17 19:00 A | 2018-11-17 20:00 A | 55 | 100% |  |  | 蓝舒雯 | 1h | 1h | OBS |
| 67 | 1.3.2.14 | 第四次修改需求工程计划 | manual | 0.2d | 2018-11-24 19:00 A | 2018-11-24 20:00 A | 64, 65, 66 | 100% |  |  | 刘祺 | 1h | 1h |  |
| 68 | 1.3.2.15 | 第五次需求工程计划修订 | manual | 0.6d | 2018-11-29 21:00 A | 2018-11-29 23:59 A | 67 | 100% |  |  | 刘祺 | 2.98h | 2.98h |  |

| ID | WBS | Task | Type | Duration | Start | Finish | Predecessors | Complete | Remaining | Actual start | Actual finish | Constraint | Resources | Work | Actual work | 最终交付物 |
| --- | --- | --- | --- | --- | --- | --- | --- | --- | --- | --- | --- | --- | --- | --- | --- | --- |
| 69 | 1.3.3 | **《项目章程》编写和审查** |  | 9.7d | 2018-10-15 19:00 | 2018-12-01 11:00 |  | 50% | 4.85d | 2018-10-16 19:00 |  |  |  | 4h | 2h |  |
| 70 | 1.3.3.1 | 《项目章程模板》寻找 | manual | 0.2d | 2018-10-16 19:00 A | 2018-10-16 20:00 A |  | 100% |  |  |  |  | 刘祺 | 1h | 1h | 《项目章程》模板 |
| 71 | 1.3.3.2 | 制定《项目章程》 | manual | 0.2d | 2018-10-16 19:00 A | 2018-10-16 20:00 | 70 |  | 0.2d |  |  |  | 赵佳锋 | 1h |  | 《项目章程》初稿 |
| 72 | 1.3.3.3 | 《项目章程》审核修订1 | manual | 0.2d | 2018-10-20 19:00 A | 2018-10-20 20:00 A | 71 | 100% |  |  |  |  | 赵唯皓 | 1h | 1h | 《项目章程》修订版 |
| 73 | 1.3.3.4 | 《项目章程》修订2 | manual | 0.2d | 2018-11-30 19:00 A | 2018-12-01 11:00 | 72 |  | 0.2d |  |  |  | 陈铭阳 | 1h |  |  |
| 74 | *.3 | **项目执行** |  | 6.7d | 2018-11-05 19:00 A | 2018-12-03 20:00 | 47 | 30% | 4.68d |  |  |  |  | 107.62h | 33.5h |  |
| 75 | 1.4.1 | **需求获取** |  | 13.2d | 2018-11-05 19:00 A | 2018-12-31 20:00 |  | 70% | 3.99d |  |  |  |  | 50.5h | 33.5h |  |
| 76 | *.3.3 | **定义及编写项目视图与范围** |  | 1d | 2018-11-05 19:00 A | 2018-11-09 20:00 |  | 90% | 0.1d |  |  |  |  | 10h | 9h |  |
| 77 | 1.4.1.1.1 | 寻找愿景和范围文档模板 | manual | 0.2d | 2018-11-05 19:00 A | 2018-11-05 20:00 A |  | 100% |  |  |  |  | 蓝舒雯 | 1h | 1h | 《愿景与范围文档》模板 |
| 78 | 1.4.1.1.2 | 愿景和范围文档第一部分 | manual | 0.2d | 2018-11-06 19:00 A | 2018-11-06 20:00 A | 77 | 100% |  |  |  |  | 刘祺 | 1h | 1h | 《愿景与范围文档》第一部分 |
| 79 | 1.4.1.1.3 | 愿景和范围文档第二部分 | manual | 0.4d | 2018-11-06 19:00 A | 2018-11-09 20:00 A | 77 | 100% |  |  |  |  | 陈铭阳 | 2h | 2h | 《愿景与范围文档》第二部分 |
| 80 | 1.4.1.1.4 | 愿景和范围文档第三部分 | manual | 0.4d | 2018-11-06 19:00 A | 2018-11-07 20:00 A | 77 | 100% |  |  |  |  | 蓝舒雯 | 2h | 2h | 《愿景与范围文档》第三部分 |
| 81 | 1.4.1.1.5 | 汇总并修改愿景与范围文档 |  | 0.4d | 2018-11-12 19:00 A | 2018-11-13 20:00 A | 78, 79, 80 | 100% |  |  |  | start no earlier than 2018-11-12 10:00 | 刘祺 | 2h | 2h | 《愿景与范围文档-初步》》 |
| 82 | 1.4.1.1.6 | 愿景与范围文档修改1 | manual | 0.2d | 2018-11-05 19:00 A | 2018-11-05 20:00 A |  | 100% |  |  |  |  | 刘祺 | 1h | 1h | 《愿景与范围文档-修订1》 |
| 83 | 1.4.1.1.7 | 愿景与范围文档修改2 | manual | 0.2d | 2018-11-13 19:00 | 2018-11-13 20:00 | 95 |  |  |  |  |  | 陈铭阳 | 1h |  | 《愿景与范围文档-修订2》 |
| 84 | 1.4.1.2 | 编写用例文档 | manual | 0.4d | 2018-11-09 19:00 A | 2018-11-10 20:00 A |  | 100% |  |  |  |  | 赵唯皓 | 2h | 2h | 《用例文档》 |
| 85 | 1.4.1.3 | 绘制范围可视化表示--特性树 | manual | 0.4d | 2018-11-12 19:00 A | 2018-11-13 20:00 A | 81, 84 | 100% |  |  |  |  | 赵佳锋 | 2h | 2h | 《特性树》 |
| 86 | 1.4.1.4 | 绘制范围可视化表示--关联图 | manual | 0.6d | 2018-11-12 19:00 A | 2018-11-14 20:00 A | 81 | 100% |  |  |  |  | 蓝舒雯 | 3h | 3h | 《关联图》 |
| 87 | 1.4.1.5 | 绘制范围可视化表示--生态系统图 | manual | 0.4d | 2018-11-13 19:00 A | 2018-11-14 20:00 A | 81 | 100% |  |  |  |  | 赵唯皓 | 2h | 2h | 《生态系统图》 |
| 88 | 1.4.1.6 | 绘制范围可视化表示--事件列表 | manual | 0.2d | 2018-11-16 19:00 A | 2018-11-16 20:00 A | 81, 86, 87 | 100% |  |  |  |  | 赵佳锋 | 1h | 1h | 《事件列表》 |
| 89 | *.3.4 | 界面初步设计1 | manual | 0.2d | 2018-11-16 19:00 A | 2018-11-17 19:00 | 84 | 100% |  |  | 2018-11-16 20:00 |  | 陈铭阳 | 1h | 1h | 界面原型-初步1 |
| 90 | 1.4.1.8 | 界面初步设计2 | manual | 0.4d | 2018-11-19 19:00 A | 2018-11-20 20:00 A | 89 | 100% |  |  |  |  | 陈铭阳 | 2h | 2h | 界面原型-初步2 |
| 91 | 1.4.1.9 | 发送访谈邀请函 | manual | 0.2d | 2018-11-23 19:00 A | 2018-11-23 20:00 A | 90, 81, 85, 86, 87, 88, 84 | 100% |  |  |  |  | 刘祺 | 1h | 1h | 《邀请函》 |
| 92 | *.3.5 | 需求获取访谈1 | manual | 0.2d | 2018-11-25 09:00 A | 2018-11-25 10:00 A | 91 | 100% |  |  |  |  | 赵佳锋; 刘祺; 赵唯皓; 蓝舒雯 | 4h | 4h | 访谈记录 |
| 93 | 1.4.1.11 | web端的界面原型 | manual | 0.4d | 2018-11-26 19:30 A | 2018-11-28 19:30 | 92 | 75% | 0.1d |  |  |  | 陈铭阳 | 2h | 1.5h |  |
| 94 | 1.4.1.12 | 发送访谈2邀请函 | manual | 0.2d | 2018-12-01 19:00 A | 2018-12-01 20:00 | 93 |  | 0.2d |  |  |  | 刘祺 | 1h |  |  |
| 95 | 1.4.1.13 | 需求访谈2 | manual | 0.2d | 2018-12-04 17:00 A | 2018-12-04 18:00 A | 94, 93 | 100% |  |  |  |  | 赵佳锋; 蓝舒雯; 刘祺; 陈铭阳; 赵唯皓 | 5h | 5h | 访谈记录 |
| 96 | 1.4.1.14 | web端的界面原型修改 | manual | 0.6d | 2018-12-07 19:00 | 2018-12-08 20:00 | 95 |  |  |  |  |  | 陈铭阳 | 3h |  |  |
| 97 | 1.4.1.15 | 需求访谈3 | manual | 0.2d | 2018-11-05 19:00 | 2018-11-05 20:00 | 83, 96 |  |  |  |  |  | 赵佳锋; 蓝舒雯; 刘祺; 陈铭阳; 赵唯皓 | 5h |  |  |
| 98 | 1.4.1.16 | 分析用户工作流程 | manual | 0.2d | 2018-11-05 19:00 | 2018-11-05 20:00 | 84, 97 |  |  |  |  |  | 赵佳锋 | 0.5h |  | 用户工作流程图 |
| 99 | 1.4.1.17 | 检查问题报告 | manual | 0.2d | 2018-11-05 19:00 | 2018-11-05 20:00 | 98 |  |  |  |  |  |  |  |  | 《检查问题报告》 |
| 100 | *.3.7 | 召开应用程序开发联系会议 | manual | 0.2d | 2018-11-05 19:00 A | 2018-11-05 20:00 | 99 |  | 0.2d |  |  |  | 赵佳锋; 蓝舒雯; 刘祺; 赵唯皓; 陈铭阳 | 5h |  | 《会议总结分析》 |
| 101 | 1.4.1.19 | 需求重用 | manual | 0.4d | 2018-11-05 19:00 | 2018-11-06 20:00 | 100 |  |  |  |  |  | 赵佳锋 | 1h |  | 《需求重用说明》 |

| ID | WBS | Task | Type | Duration | Start | Finish | Predecessors | Resources | Work | 最终交付物 |
| --- | --- | --- | --- | --- | --- | --- | --- | --- | --- | --- |
| 102 | 1.4.2 | **需求分析** |  | 8.5d | 2018-12-03 08:00 | 2018-12-28 20:00 | 75 |  | 8.5h |  |
| 103 | 1.4.2.1 | 创建开发原型 | manual | 0.1d | 2018-12-03 08:00 | 2018-12-03 08:30 | 101 | 赵佳锋 | 0.5h | 《开发原型》文档 |
| 104 | 1.4.2.2 | 分析可行性 | manual | 0.2d | 2018-12-03 08:00 | 2018-12-03 09:00 | 103FF | 赵唯皓 | 1h | 《需求可行性》文档 |
| 105 | 1.4.2.3 | 确认需求优先级 | manual | 0.2d | 2018-12-03 08:00 | 2018-12-03 09:00 | 104 | 刘祺 | 1h | 《需求优先级》文档 |
| 106 | 1.4.2.4 | 需求建模 | manual | 0.4d | 2018-12-03 08:00 | 2018-12-03 10:00 | 105 | 陈铭阳 | 2h | UML各种图和必要文档 |
| 107 | 1.4.2.5 | 编写数据字典 | manual | 0.4d | 2018-12-03 08:00 | 2018-12-03 10:00 | 106SS | 蓝舒雯 | 2h | 《数据字典》 |
| 108 | 1.4.2.6 | 应用质量功能调配 | manual | 0.2d | 2018-12-03 08:00 | 2018-12-03 09:00 | 107, 106 | 蓝舒雯; 刘祺 | 2h | 调配文档 |
| 109 | 1.4.3 | **需求规格说明** |  | 1.4d | 2018-12-01 19:00 | 2018-12-05 19:30 | 102 |  | 18.26h |  |
| 110 | 1.4.3.1 | **采用需求规格说明模板** |  | 1.3d | 2018-12-03 19:00 | 2018-12-05 20:00 |  |  | 8h | 需求规格模板 |
| 111 | 1.4.3.1.1 | 《SRS》第1部分草稿 | manual | 0.4d | 2018-12-07 19:00 | 2018-12-08 19:00 |  | 刘祺 | 2h |  |
| 112 | 1.4.3.1.2 | 《SRS》第2部分草稿 | manual | 0.4d | 2018-12-07 19:00 | 2018-12-08 19:00 |  | 赵佳锋 | 2h |  |
| 113 | 1.4.3.1.3 | 《SRS》第3部分草稿 | manual | 0.4d | 2018-12-07 19:00 | 2018-12-08 19:00 |  | 赵唯皓 | 2h |  |
| 114 | 1.4.3.1.4 | 《SRS》第4部分草稿 | manual | 0.4d | 2018-12-07 19:00 | 2018-12-08 19:00 |  | 蓝舒雯 | 2h |  |
| 115 | 1.4.3.2 | 指明需求来源 | manual | 0.4d | 2018-12-01 19:00 | 2018-12-03 20:00 | 110 | 刘祺 | 2h | 《需求来源》文档 |
| 116 | 1.4.3.3 | 为每一项需求注上标号 | manual | 0.2d | 2018-12-01 19:00 | 2018-12-01 20:00 | 115FF | 赵唯皓 | 1h | 《会议纪要》 |
| 117 | 1.4.3.4 | 记录业务规范 | manual | 0.4d | 2018-12-01 19:00 | 2018-12-03 20:00 | 110 | 蓝舒雯 | 2h | 《业务规范文档》 |
| 118 | 1.4.3.5 | 创建需求跟踪能力矩阵 | manual | 0.4d | 2018-12-01 19:00 | 2018-12-03 20:00 | 110 | 赵唯皓 | 0.26h | 《需求跟踪能力矩阵》 |
| 119 | 1.4.3.6 | 创建需求跟踪能力矩阵 | manual | 0.2d | 2018-12-01 19:00 | 2018-12-01 20:00 | 118 | 陈铭阳 | 1h |  |
| 120 | 1.4.3.7 | 初定需求规格说明书 | manual | 0.9d | 2018-12-01 19:00 | 2018-12-03 22:30 | 110, 115, 116, 117, 118FF | 赵佳锋; 刘祺 | 4h | 《需求规格说明书-初稿》 |
| 121 | 1.4.4 | **需求规格审核** |  | 3.4d | 2018-12-17 08:00 | 2018-12-22 20:00 | 109 |  | 11.06h |  |
| 122 | 1.4.4.1 | 审查需求规格说明 | manual | 0.6d | 2018-12-17 08:00 | 2018-12-17 11:00 | 120 | 蓝舒雯 | 1.32h | 审查结果及《需求规格说明书》修订版1 |
| 123 | 1.4.4.2 | 编写测试用例 | manual | 0.6d | 2018-12-17 08:00 | 2018-12-17 11:00 |  | 陈铭阳 | 3h | 《测试用例文档初稿》 |
| 124 | 1.4.4.3 | 修订测试用例 | manual | 0.2d | 2018-12-17 08:00 | 2018-12-17 09:00 | 123, 122 | 陈铭阳 | 1h | 《测试用例文档终稿》 |
| 125 | 1.4.4.4 | 编写用户手册 | manual | 0.6d | 2018-12-17 08:00 | 2018-12-17 11:00 |  | 刘祺 | 1.41h | 《用户手册初稿》 |
| 126 | 1.4.4.5 | 修订用户手册 | manual | 0.4d | 2018-12-17 08:00 | 2018-12-17 10:00 | 125 | 赵佳锋; 刘祺 | 2.33h | 《用户手册终稿》 |
| 127 | *.3.9 | 修订需求规格说明书 | manual | 0.2d | 2018-12-17 08:00 | 2018-12-17 09:00 | 122, 124, 126 | 陈铭阳; 赵唯皓 | 2h | 《需求说明SRS》最终修订版 |

| ID | WBS | Task | Type | Duration | Start | Finish | Predecessors | Complete | Remaining | Actual start | Total slack | Constraint | Resources | Work | Actual work | 最终交付物 |
| --- | --- | --- | --- | --- | --- | --- | --- | --- | --- | --- | --- | --- | --- | --- | --- | --- |
| 128 | 1.4.5 | **需求管理** |  | 1.8d | 2018-12-24 09:00 A | 2018-12-29 20:00 |  |  | 1.8d |  | 0d |  |  | 19.3h |  |  |
| 129 | 1.4.5.1 | 建立变更控制委员会 | manual | 0.2d | 2018-12-24 09:00 | 2018-12-24 10:00 | 127 |  |  |  |  |  | 赵佳锋; 蓝舒雯; 刘祺; 陈铭阳; 赵唯皓 | 4.5h |  | 变更控制委员会成员信息 |
| 130 | *.4.1 | 召开紧急会议确定变更控制过程 | manual | 0.2d | 2018-12-25 19:00 A | 2018-12-25 20:00 | 129 |  | 0.2d |  |  |  | 赵佳锋; 蓝舒雯; 刘祺; 陈铭阳; 赵唯皓 | 5h |  | 《需求变更控制过程》文档 |
| 131 | *.4.2 | 分析变更影响 | manual | 0.2d | 2018-12-26 19:00 A | 2018-12-26 20:00 | 130 |  | 0.2d |  |  |  | 陈铭阳; 赵唯皓 | 2h |  | 《变更影响分析》文档 |
| 132 | *.4.3 | 跟踪每一项变更 | manual | 0.2d | 2018-12-26 19:00 A | 2018-12-26 20:00 | 130 |  | 0.2d |  |  |  | 刘祺 | 1h |  | 《跟踪记录》 |
| 133 | 1.4.5.5 | 跟踪需求状态 | manual | 0.2d | 2018-12-26 19:00 | 2018-12-26 20:00 | 130 |  |  |  |  |  | 赵佳锋 | 1h |  | 《跟踪需求状态记录》 |
| 134 | 1.4.5.6 | 编写需求文档的基准版本和控制版本 | manual | 0.2d | 2018-12-28 19:00 | 2018-12-28 20:00 | 131, 132, 133 |  |  |  |  |  | 蓝舒雯 | 1h |  | 《需求文档的基准版和控制版》初稿 |
| 135 | 1.4.5.7 | 修订需求文档的基准版本和控制版本 | manual | 0.2d | 2018-12-29 19:00 | 2018-12-29 20:00 | 134 |  |  |  |  |  | 赵唯皓 | 1h |  | 《需求文档的基准版和控制版》修订 |
| 136 | 1.4.5.8 | 编写《需求变更控制文档》 | manual | 0.2d | 2018-12-28 19:00 | 2018-12-28 20:00 | 131, 132, 133 |  |  |  |  |  | 赵佳锋; 刘祺 | 1.8h |  | 《需求变更管理-初稿》 |
| 137 | 1.4.5.9 | 组内审核修订《需求变更控制文档》 | manual | 0.2d | 2018-12-29 19:00 | 2018-12-29 20:00 | 136 |  |  |  |  |  | 陈铭阳; 赵佳锋 | 2h |  | 《需求变更管理》 |
| 138 | 1.5 | **项目控制** |  | 9.2d | 2018-11-09 19:00 | 2018-12-16 20:00 | 74 | 12% | 8.07d | 2018-09-27 19:00 |  |  |  | 73.5h | 11h |  |
| 139 | 1.5.1 | **团建** |  | 0.1d | 2018-10-07 19:00 A | 2018-10-07 20:00 A |  | 100% |  |  |  |  |  | 5h | 5h |  |
| 140 | 1.5.1.1 | 第一次团建 | manual | 0.2d | 2018-10-07 19:00 A | 2018-10-07 20:00 A | 3 | 100% |  |  |  |  | 赵佳锋; 蓝舒雯; 刘祺; 陈铭阳; 赵唯皓 | 5h | 5h | 团建记录 |
| 141 | 1.5.2 | **小组例会** |  | 19.9d | 2018-11-09 19:00 | 2019-02-11 19:30 |  |  | 19.9d | 2018-09-27 19:00 |  |  |  | 38.5h |  |  |
| 142 | 1.5.2.1 | G12-第1次例会（常规） | manual | 0.1d | 2018-09-27 19:00 A | 2018-09-27 19:30 |  |  | 0.1d |  |  |  | 赵佳锋; 蓝舒雯; 刘祺; 陈铭阳; 赵唯皓 | 2.5h |  | 《会议纪要》 |
| 143 | 1.5.2.2 | G12-第2次例会（常规） | manual | 0.1d | 2018-10-11 19:00 A | 2018-10-11 19:30 | 142 |  | 0.1d |  |  |  | 赵佳锋; 蓝舒雯; 刘祺; 陈铭阳; 赵唯皓 | 2.5h |  | 《会议纪要》 |
| 144 | 1.5.2.3 | G12-第3次例会（常规） | manual | 0.1d | 2018-10-18 19:00 A | 2018-10-18 19:30 | 143 |  | 0.1d |  |  |  | 赵佳锋; 蓝舒雯; 刘祺; 陈铭阳; 赵唯皓 | 2.5h |  | 《会议纪要》 |
| 145 | 1.5.2.4 | G12-第4次例会（常规） | manual | 0.1d | 2018-10-25 19:00 A | 2018-10-25 19:30 | 144 |  | 0.1d |  |  |  | 赵佳锋; 蓝舒雯; 刘祺; 陈铭阳; 赵唯皓 | 2.5h |  | 《会议纪要》 |
| 146 | 1.5.2.5 | G12-第5次例会（常规） | manual | 0.1d | 2018-11-01 19:00 A | 2018-11-01 19:30 | 145 |  | 0.1d |  |  |  | 赵佳锋; 蓝舒雯; 刘祺; 陈铭阳; 赵唯皓 | 2.5h |  | 《会议纪要》 |
| 147 | 1.5.2.6 | G12-第6次例会（常规） | manual | 0.1d | 2018-11-08 19:00 A | 2018-11-10 19:30 | 146 |  | 0.1d |  |  | start no earlier than 2018-11-08 19:00 | 赵佳锋; 蓝舒雯; 刘祺; 陈铭阳; 赵唯皓 | 2.5h |  | 《会议纪要》 |
| 148 | 1.5.2.7 | G12-第7次例会（常规） | manual | 0.1d | 2018-11-15 19:00 A | 2018-11-19 13:30 | 147 |  | 0.1d |  |  |  | 赵佳锋; 蓝舒雯; 刘祺; 陈铭阳; 赵唯皓 | 2.5h |  | 《会议纪要》 |
| 149 | 1.5.2.8 | G12-第8次例会（常规） | manual | 0.2d | 2018-11-19 19:00 A | 2018-11-21 20:00 | 148 |  | 0.2d |  |  |  | 赵佳锋; 蓝舒雯; 刘祺; 陈铭阳; 赵唯皓 | 5h |  | 《会议纪要》 |
| 150 | 1.5.2.9 | G12-第9次例会（常规） | manual | 0.1d | 2018-11-22 19:00 A | 2018-11-25 10:30 | 149 |  | 0.1d |  |  |  | 赵佳锋; 蓝舒雯; 刘祺; 陈铭阳; 赵唯皓 | 2.5h |  | 《会议纪要》 |
| 151 | 1.5.2.10 | G12-第10次例会（常规） | manual | 0.1d | 2018-11-29 19:00 A | 2018-11-29 19:30 | 150 |  | 0.1d |  |  |  | 赵佳锋; 蓝舒雯; 刘祺; 陈铭阳; 赵唯皓 | 2.5h |  | 《会议纪要》 |
| 152 | 1.5.2.11 | G12-第11次例会（临时） | manual | 0.2d | 2018-12-01 10:00 A | 2018-12-01 20:00 | 151 |  | 0.2d |  |  |  | 赵佳锋; 蓝舒雯; 刘祺; 陈铭阳; 赵唯皓 | 1h |  | 访谈问题，《会议纪要》 |
| 153 | 1.5.2.12 | G12-第12次例会（常规） | manual | 0.1d | 2018-12-06 19:00 | 2018-12-06 19:30 | 152 |  |  |  |  |  | 赵佳锋; 蓝舒雯; 刘祺; 陈铭阳; 赵唯皓 | 2h |  | 《会议纪要》 |
| 154 | 1.5.2.13 | G12-第13次例会（常规） | manual | 0.1d | 2018-12-13 19:00 A | 2018-12-13 20:00 | 153 |  | 0.1d |  |  |  | 赵佳锋; 蓝舒雯; 刘祺; 陈铭阳; 赵唯皓 | 0.5h |  | 《会议纪要》 |
| 155 | 1.5.2.14 | G12-第14次例会（常规） | manual | 0.2d | 2018-12-20 19:00 | 2018-12-20 20:00 | 154 |  |  |  |  |  | 赵佳锋; 蓝舒雯; 刘祺; 陈铭阳; 赵唯皓 | 2.5h |  | 《会议纪要》 |
| 156 | 1.5.2.15 | G12-第15次例会（常规） | manual | 0.2d | 2018-12-27 19:00 | 2018-12-27 20:00 | 155 |  |  |  |  |  | 赵佳锋; 蓝舒雯; 刘祺; 陈铭阳; 赵唯皓 | 2.5h |  | 《会议纪要》 |
| 157 | 1.5.2.16 | G12-第16次例会（常规） | manual | 0.2d | 2019-01-03 19:00 | 2019-01-03 20:00 | 156 |  |  |  |  |  | 赵佳锋; 蓝舒雯; 刘祺; 陈铭阳; 赵唯皓 | 2.5h |  | 《会议纪要》 |

| ID | WBS | Task | Type | Duration | Start | Finish | Predecessors | Complete | Remaining | Total slack | Free slack | Constraint | Resources | Work | Actual work | 最终交付物 |
| --- | --- | --- | --- | --- | --- | --- | --- | --- | --- | --- | --- | --- | --- | --- | --- | --- |
| 158 | 1.5.3 | **过程评审** |  | 12.8d | 2018-11-11 11:00 A | 2019-01-02 11:00 |  | 17% | 10.66d | 0d |  |  |  | 30h | 6h |  |
| 159 | 1.5.3.1 | **需求工程项目计划评审** |  | 11.4d | 2018-11-11 11:00 A | 2018-12-09 11:00 |  | 30% | 7.98d |  |  |  |  | 11h | 6h |  |
| 160 | 1.5.3.1.1 | 需求计划评审第一次 | manual | 0.3d | 2018-11-29 15:00 A | 2018-11-29 16:30 A | 51, 67, 72 | 100% |  |  |  |  | 赵佳锋; 蓝舒雯; 陈铭阳; 赵唯皓 | 6h | 6h | 评审结果及修改文档 |
| 161 | 1.5.3.1.2 | 需求计划评审（重评） | manual | 0.7d | 2018-11-11 11:00 | 2018-11-11 14:30 | 160, 68, 52, 73, 153 |  |  |  |  |  | 赵佳锋; 蓝舒雯; 刘祺; 陈铭阳; 赵唯皓 | 5h |  | 评审结果及修改文档 |
| 162 | 1.5.3.2 | 需求规格说明文档评审 | milestone | 0.2d | 2018-12-26 10:00 | 2018-12-26 11:00 | 127 |  |  | -2.4d | 0d | finish no earlier than 2018-12-26 11:00 | 赵佳锋; 蓝舒雯; 刘祺; 陈铭阳; 赵唯皓 | 5h |  | 《评审结果及修改内容要求 |
| 163 | 1.5.3.3 | 需求变更控制文档评审 | milestone, manual | 0.6d | 2019-01-02 08:00 | 2019-01-02 11:00 | 137 |  |  |  |  |  | 赵佳锋; 蓝舒雯; 刘祺; 陈铭阳; 赵唯皓 | 14h |  | 《评审结果及修改内容要求 |
| 164 | 1.6 | **项目收尾** |  | 4.8d | 2018-12-21 19:00 | 2019-01-10 20:00 | 138 |  |  |  |  |  |  | 12.19h |  |  |
| 165 | 1.6.1 | 整合已完成文档 | manual | 0.2d | 2019-01-03 19:00 | 2019-01-03 20:00 | 162, 163, 161 |  |  |  |  |  | 赵佳锋; 蓝舒雯; 刘祺; 陈铭阳; 赵唯皓 | 0.52h |  | 《项目总结报告》 |
| 166 | 1.6.2 | 编写项目总结报告 | manual | 0.4d | 2019-01-04 19:00 | 2019-01-05 20:00 | 165 |  |  |  |  |  |  |  |  |  |
| 167 | 1.6.3 | 制作项目总结报告PPT-1 | manual | 0.2d | 2019-01-05 19:00 | 2019-01-05 20:00 | 166 |  |  |  |  |  | 蓝舒雯; 赵唯皓 | 2h |  | 最终评审PPT |
| 168 | 1.6.4 | 制作项目总结报告PPT-2 | manual | 0.4d | 2019-01-07 19:00 | 2019-01-08 20:00 | 166 |  |  |  |  |  | 蓝舒雯; 赵唯皓 | 4h |  | 最终评审PPT |
| 169 | 1.6.5 | 最终评审 | milestone, manual | 0.2d | 2019-01-09 19:00 | 2019-01-09 20:00 | 167, 168, 157 |  |  |  |  |  | 赵佳锋; 蓝舒雯; 刘祺; 陈铭阳; 赵唯皓 | 5h |  | 评审结果 |
| 170 | 1.6.6 | 按评审要求修改需提交的文档并提交 | manual | 0.4d | 2019-01-10 19:00 | 2019-01-11 20:00 | 169 |  |  |  |  |  |  |  |  | 整理的需提交的最终所有文档 |
| 171 | 1.6.7 | 散伙饭 | manual | 0.2d | 2019-01-12 19:00 | 2019-01-12 20:00 | 170 |  |  |  |  |  | 赵佳锋; 蓝舒雯; 刘祺; 陈铭阳; 赵唯皓 | 0.67h |  |  |
