# PRD2018-G12-甘特图11

Schedule from MS Project, 2018-09-19 to 2019-01-19, status date 2018-10-30, 5 hours a day, A marks actual dates.
HP

## Calendars

- 需求项目日历: Mon-Sat 19:00-20:00; Sun off. Exceptions (off unless hours are given): 2018-10-01 to 2018-10-06 (国庆假期), 2018-10-07 18:00-19:30 (第一次团建), 2018-11-19 13:00-14:00, 19:00-20:00 (第一次访谈前的准备), 2018-11-25 09:30-10:30 (访谈1), 2018-11-29 15:00-16:30, 19:00-20:00, 21:00-23:59 (需求计划评审1), 2018-12-01 10:00-12:00, 19:00-20:00 (第2次访谈前准备), 2018-12-02 19:00-20:00 (发送邀请函), 2018-12-03 19:00-20:00 (c), 2018-12-04 17:00-18:00, 19:00-20:00 (访谈2), 2018-12-12 09:00-11:00, 19:00-20:00 (需求计划重评), 2018-12-16 08:00-12:00 (应用程序开发会议), 2018-12-17 17:00-21:00 (需求重用加班), 2018-12-23 09:00-12:00 (建立变更控制委员会), 2018-12-31 17:00-21:00 (审查规格说明加班), 2019-01-01 17:00-23:00 (测试用例加班), 2019-01-02 17:00-23:00 (修订用例加班), 2019-01-03 19:00-21:00 (建立变更控制委员会), 2019-01-04 16:00-23:00 (加班编写文档), 2019-01-05 16:00-23:00 (加班编写文档2), 2019-01-06 18:00-20:00 (延迟小组会议), 2019-01-07 18:00-20:00 (最后一次会议), 2019-01-10 18:00-22:00 (加班整合文档), 2019-01-11 18:00-22:00 (加班编写项目总结), 2019-01-12 18:00-21:00 (加班制作评审ppt), 2019-01-13 08:00-12:00, 13:00-17:00 (b编写项目总结报告), 2019-01-15 18:00-21:00 (散伙饭).

## Resources

| Resource |
| --- |
| 蓝舒雯 |
| 刘祺 |
| 赵佳锋 |
| 陈铭阳 |
| 赵唯皓 |

## Schedule

| ID | WBS | Task | Type | Duration | Start | Finish | Predecessors | Complete | Remaining | Actual start | Actual finish | Resources | Work | Actual work | 最终交付物 |
| --- | --- | --- | --- | --- | --- | --- | --- | --- | --- | --- | --- | --- | --- | --- | --- |
| 1 | * | **软件工程系列课程教学辅助网站-需求工程项目** |  | 35.8d | 2018-09-19 08:00 | 2019-01-16 20:00 |  | 99% | 0.43d | 2018-09-19 19:00 |  |  | 658.48h | 644.62h |  |
| 2 | *.1 | **项目启动** |  | 1d | 2018-09-19 19:00 A | 2018-09-23 20:00 |  | 100% |  |  | 2018-09-24 20:00 |  | 11h | 11h |  |
| 3 | *.1.1 | 确定小组人员并成立G12小组 | manual | 0.4d | 2018-09-19 19:00 A | 2018-09-20 20:00 A |  | 100% |  |  |  | 赵佳锋; 蓝舒雯; 刘祺; 陈铭阳; 赵唯皓 | 5h | 5h | 《G12小组成员信息》 |
| 4 | *.1.4 | 项目任务书下达 | manual | 0.2d | 2018-09-20 19:00 A | 2018-09-21 20:00 A | 3 | 100% |  |  |  |  | 1h | 1h | 《项目任务书》 |
| 5 | 1.1.3 | 安装配置管理工具初步 | manual | 0.6d | 2018-09-21 19:00 A | 2018-09-24 20:00 A | 4 | 100% |  |  |  | 赵佳锋; 陈铭阳 | 3h | 3h | 《配置结果》 |
| 6 | 1.1.4 | logo设计 | manual | 0.4d | 2018-09-21 19:00 A | 2018-09-22 20:00 A | 4 | 100% |  |  |  | 蓝舒雯 | 2h | 2h | logo |
| 7 | 1.2 | **知识储备** |  | 19.3d | 2018-10-08 19:00 A | 2018-12-23 20:00 |  | 100% |  |  | 2018-12-31 20:30 |  | 38.84h | 38.84h |  |
| 8 | 1.2.1 | **UML概述** |  | 1.4d | 2018-10-08 19:00 A | 2018-10-14 20:00 |  | 100% |  |  | 2018-10-13 20:00 |  | 7.86h | 7.86h | 翻转1ppt |
| 9 | 1.2.1.1 | PPT1-4部分 | manual | 0.2d | 2018-10-08 19:00 A | 2018-10-10 20:00 A |  | 100% |  |  |  | 赵佳锋 | 1h | 1h | 《部分ppt资料》 |
| 10 | 1.2.1.2 | PPT 第5部分 | manual | 0.6d | 2018-10-08 19:00 A | 2018-10-11 20:00 A |  | 100% |  |  |  | 蓝舒雯 | 0.38h | 0.38h | 《部分ppt资料》 |
| 11 | 1.2.1.3 | PPT 第6部分 | manual | 0.6d | 2018-10-08 19:00 A | 2018-10-11 20:00 A |  | 100% |  |  |  | 赵唯皓 | 0.48h | 0.48h | 《部分ppt资料》 |
| 12 | 1.2.1.4 | PPT 第7部分 | manual | 0.4d | 2018-10-08 19:00 A | 2018-10-10 20:00 A |  | 100% |  |  |  | 陈铭阳 | 2h | 2h | 《部分ppt资料》 |
| 13 | 1.2.1.5 | PPT第8部分 | manual | 0.4d | 2018-10-09 19:00 A | 2018-10-10 20:00 A |  | 100% |  |  |  | 刘祺 | 2h | 2h | 《部分ppt资料》 |
| 14 | 1.2.1.6 | 整合制成PPt | manual | 0.2d | 2018-10-12 19:00 A | 2018-10-13 19:30 A | 9, 10, 11, 12, 13 | 100% |  |  |  | 陈铭阳 | 1h | 1h | 完整ppt |
| 15 | 1.2.1.7 | 审核检查 | manual | 0.2d | 2018-10-13 19:00 A | 2018-10-13 20:00 A | 14 | 100% |  |  |  | 刘祺 | 1h | 1h | 翻转ppt |
| 16 | 1.2.2 | **UML工具** |  | 1.4d | 2018-10-15 19:00 A | 2018-10-21 20:00 | 8 | 100% |  |  | 2018-10-20 20:00 |  | 4.28h | 4.28h | 翻转2ppt |
| 17 | 1.2.2.1 | PPT 第1部分资料收集 | manual | 0.4d | 2018-10-15 19:00 A | 2018-10-16 20:00 A |  | 100% |  |  |  | 蓝舒雯 | 0.14h | 0.14h | 《部分ppt资料》 |
| 18 | 1.2.2.2 | PPT 2-5部分资料收集 | manual | 0.2d | 2018-10-15 19:00 A | 2018-10-17 20:00 A | 17FF, 20FF, 21FF, 22FF | 100% |  |  |  | 赵佳锋 | 1h | 1h | 《部分ppt资料》 |
| 19 | 1.2.2.3 | PPT资料整合及审核 | manual | 0.2d | 2018-10-20 19:00 A | 2018-10-20 20:00 A | 18, 17, 20, 21, 22 | 100% |  |  |  | 陈铭阳 | 1h | 1h | 翻转ppt |
| 20 | 1.2.2.4 | PPT 第6部分资料收集 | manual | 0.2d | 2018-10-15 19:00 A | 2018-10-17 20:00 A |  | 100% |  |  |  | 陈铭阳 | 1h | 1h | 《部分ppt资料》 |
| 21 | 1.2.2.5 | PPT 第7部分资料收集 | manual | 0.2d | 2018-10-15 19:00 A | 2018-10-15 20:00 A |  | 100% |  |  |  | 刘祺 | 1h | 1h | 《部分ppt资料》 |
| 22 | 1.2.2.6 | PPT 第8部分资料收集 | manual | 0.4d | 2018-10-15 19:00 A | 2018-10-16 20:00 A |  | 100% |  |  |  | 赵唯皓 | 0.14h | 0.14h | 《部分ppt资料》 |
| 23 | 1.2.3 | **UML基础1** |  | 1.4d | 2018-10-22 19:00 A | 2018-10-28 20:00 | 16 | 100% |  |  | 2018-10-26 20:00 |  | 3.71h | 3.71h | 翻转3ppt |
| 24 | 1.2.3.1 | PPT 第2部分 | manual | 0.1d | 2018-10-22 19:00 A | 2018-10-22 20:00 A |  | 100% |  |  |  | 刘祺 | 0.5h | 0.5h | 《部分ppt资料》 |
| 25 | 1.2.3.2 | PPT 第3部分 | manual | 0.2d | 2018-10-22 19:00 A | 2018-10-22 20:00 A |  | 100% |  |  |  | 蓝舒雯 | 0.07h | 0.07h | 《部分ppt资料》 |
| 26 | 1.2.3.3 | PPT 第4部分 | manual | 0.2d | 2018-10-22 19:00 A | 2018-10-22 20:00 A |  | 100% |  |  |  | 陈铭阳 | 1h | 1h | 《部分ppt资料》 |
| 27 | 1.2.3.4 | PPT 第7部分 | manual | 0.4d | 2018-10-22 19:00 A | 2018-10-23 20:00 A |  | 100% |  |  |  | 赵唯皓 | 0.14h | 0.14h | 《部分ppt资料》 |
| 28 | 1.2.3.5 | PPT 1、5、6、8、9部分 | manual | 0.2d | 2018-10-23 19:00 A | 2018-10-23 20:00 A |  | 100% |  |  |  | 赵佳锋 | 1h | 1h | ppt初步 |
| 29 | 1.2.3.6 | PPT整合及审核 | manual | 0.2d | 2018-10-26 19:00 A | 2018-10-26 20:00 A | 28, 24, 25, 26, 27 | 100% |  |  |  | 陈铭阳 | 1h | 1h | 完整PPT |

| ID | WBS | Task | Type | Duration | Start | Finish | Predecessors | Complete | Actual start | Actual finish | Constraint | Resources | Work | Actual work | 最终交付物 |
| --- | --- | --- | --- | --- | --- | --- | --- | --- | --- | --- | --- | --- | --- | --- | --- |
| 30 | 1.2.4 | **UML基础2** |  | 1.4d | 2018-10-29 19:00 A | 2018-11-04 20:00 | 23 | 100% |  | 2018-11-03 20:00 |  |  | 11h | 11h |  |
| 31 | 1.2.4.1 | 修改翻转pptUML基础1 | milestone, manual | 0d | 2018-10-29 19:00 A | 2018-10-29 19:00 A | 28 | 100% |  |  |  | 刘祺 |  |  |  |
| 32 | 1.2.4.2 | 「原型的定义和动机」部分 | manual | 0.2d | 2018-10-30 19:00 A | 2018-10-30 20:00 A | 31 | 100% |  |  |  | 刘祺 | 1h | 1h | 「原型的定义和动机」部分PPT资料 |
| 33 | 1.2.4.3 | 「原型成功的因素」和「原型界面介绍」部分PPt资料 | manual | 0.4d | 2018-10-30 19:00 A | 2018-10-31 20:00 A | 31 | 100% |  |  |  | 蓝舒雯 | 2h | 2h | 「原型成功的因素」和「原型界面介绍」部分 |
| 34 | 1.2.4.4 | 「原型风险」部分 | manual | 0.4d | 2018-10-30 19:00 A | 2018-10-31 20:00 A | 31 | 100% |  |  |  | 赵唯皓 | 2h | 2h | 「原型风险」部分PPT资料 |
| 35 | 1.2.4.5 | 「原型的使用和评估」部分 | manual | 0.4d | 2018-10-30 19:00 A | 2018-10-31 20:00 A | 31 | 100% |  |  |  | 陈铭阳 | 2h | 2h | 「原型的使用和评估」部分PPt资料 |
| 36 | 1.2.4.6 | 「原型的未来用途和形式」和「Axure RP的界面和使用」部分 | manual | 0.4d | 2018-10-30 19:00 A | 2018-10-31 20:00 A | 31 | 100% |  |  |  | 赵佳锋 | 2h | 2h | 「原型的未来用途和形式」和「Axure RP的界面和使用」部分PPt资料 |
| 37 | 1.2.4.7 | PPT整合 | manual | 0.2d | 2018-11-02 19:00 A | 2018-11-02 20:00 A | 32, 33, 34, 35, 36 | 100% |  |  |  | 陈铭阳 | 1h | 1h | 第四次翻转ppt-UML学习基础2起草 |
| 38 | 1.2.4.8 | PPt小组内审核及修改 | manual | 0.2d | 2018-11-03 19:00 A | 2018-11-03 20:00 A | 37 | 100% |  |  |  | 刘祺 | 1h | 1h | 第四次翻转ppt-UML学习基础2审核版 |
| 39 | 1.2.5 | **UML基础3** |  | 4d | 2018-12-07 08:00 | 2018-12-08 08:00 | 30 | 100% | 2018-12-03 19:00 | 2018-12-05 20:00 |  |  | 7h | 7h |  |
| 40 | 1.2.5.1 | 搜集第一部分和第三部分资料 | manual | 0.4d | 2018-12-03 19:00 A | 2018-12-04 18:00 A |  | 100% |  |  |  | 赵唯皓 | 2h | 2h | 《部分ppt资料》 |
| 41 | 1.2.5.2 | 搜集第二部分资料 | manual | 0.4d | 2018-12-03 19:00 A | 2018-12-04 18:00 A |  | 100% |  |  |  | 赵佳锋 | 2h | 2h | 《部分ppt资料》 |
| 42 | 1.2.5.3 | PPT第一部分及汇总和审核 | manual | 0.2d | 2018-12-05 19:00 A | 2018-12-05 20:00 A | 40FF, 41FF, 43FF, 44FF | 100% |  |  | start no earlier than 2018-12-05 19:00 | 陈铭阳 | 1h | 1h | 完整翻转ppt |
| 43 | 1.2.5.4 | PPT第二部分 | manual | 0.2d | 2018-12-05 19:00 A | 2018-12-05 20:00 A |  | 100% |  |  | start no earlier than 2018-12-05 19:00 | 刘祺 | 1h | 1h | 部分ppt |
| 44 | 1.2.5.5 | PPT第三部分 | manual | 0.2d | 2018-12-05 19:00 A | 2018-12-05 20:00 A |  | 100% |  |  |  | 蓝舒雯 | 1h | 1h | 部分ppt |
| 45 | 1.2.6 | **UML基础4** |  | 5.6d | 2018-12-10 08:00 | 2018-12-16 17:00 | 39 | 100% | 2018-12-19 19:00 | 2018-12-31 20:30 |  |  | 5h | 5h |  |
| 46 | 1.2.6.1 | PPT第一部分及汇总和审核 | manual | 0.2d | 2018-12-21 19:00 A | 2018-12-23 09:30 A | 47, 49, 48, 50 | 100% |  |  | start no earlier than 2018-12-21 19:00 | 陈铭阳 | 1h | 1h | 完整翻转ppt |
| 47 | 1.2.6.2 | PPT第二部分 | manual | 0.2d | 2018-12-19 19:00 A | 2018-12-19 20:00 A |  | 100% |  |  | start no earlier than 2018-12-19 19:00 | 刘祺 | 1h | 1h | 部分ppt |
| 48 | 1.2.6.3 | PPT第三部分 | manual | 0.2d | 2018-12-19 19:00 A | 2018-12-31 20:30 A |  | 100% |  |  |  | 蓝舒雯 | 1h | 1h | 部分ppt |
| 49 | 1.2.6.4 | PPT第四部分 | manual | 0.2d | 2018-12-20 19:00 A | 2018-12-20 20:00 A |  | 100% |  |  |  | 赵佳锋 | 1h | 1h | 部分ppt |
| 50 | 1.2.6.5 | PPT第五部分 | manual | 0.2d | 2018-12-20 19:00 A | 2018-12-20 20:00 A |  | 100% |  |  |  | 赵唯皓 | 1h | 1h | 部分ppt |
| 51 | 1.3 | **项目计划** |  | 15.4d | 2018-09-24 19:00 A | 2018-12-12 20:00 A | 2 | 100% |  |  |  |  | 32.98h | 32.98h |  |
| 52 | 1.3.1 | **《可行性分析报告》编写和修订** |  | 1.4d | 2018-09-24 19:00 A | 2018-09-30 20:00 |  | 100% |  | 2018-12-02 20:00 |  |  | 7h | 7h |  |
| 53 | 1.3.1.1 | 寻找《可行性分析报告》模板 | manual | 0.2d | 2018-09-24 19:00 A | 2018-09-24 20:00 A | 5 | 100% |  |  |  | 刘祺 | 1h | 1h | 《可行性分析报告》模板 |
| 54 | 1.3.1.2 | 编写《可行性分析报告1》 | manual | 0.4d | 2018-09-25 19:00 A | 2018-09-26 20:00 A | 53 | 100% |  |  |  | 赵唯皓 | 2h | 2h | 《可行性分析报告》部分 |
| 55 | 1.3.1.3 | 编写《可行性分析报告2》 | manual | 0.4d | 2018-09-28 19:00 A | 2018-09-29 20:00 A | 54 | 100% |  |  |  | 陈铭阳 | 2h | 2h | 《可行性分析报告》初稿 |
| 56 | 1.3.1.4 | 《可行性分析报告》修订1 | manual | 0.2d | 2018-11-30 19:00 A | 2018-11-30 20:00 A | 55 | 100% |  |  |  | 赵唯皓 | 1h | 1h | 《可行性分析报告》修订1 |
| 57 | 1.3.1.5 | 《可行性分析报告》修订2 | manual | 0.2d | 2018-12-02 19:00 A | 2018-12-02 20:00 A | 56 | 100% |  |  |  | 赵唯皓 | 1h | 1h | 《可行性分析报告》修订2 |

| ID | WBS | Task | Type | Duration | Start | Finish | Predecessors | Complete | Remaining | Actual start | Actual finish | Constraint | Resources | Work | Actual work | 最终交付物 |
| --- | --- | --- | --- | --- | --- | --- | --- | --- | --- | --- | --- | --- | --- | --- | --- | --- |
| 58 | 1.3.2 | **《需求工程项目计划》的编写和修订** |  | 12.4d | 2018-09-24 19:00 A | 2018-12-01 11:00 |  | 100% |  |  | 2018-12-12 20:00 |  |  | 20.98h | 20.98h |  |
| 59 | 1.3.2.1 | 找寻《项目计划》模板 | manual | 0.2d | 2018-09-24 19:00 A | 2018-09-24 20:00 A | 4 | 100% |  |  |  |  | 陈铭阳 | 1h | 1h | 《项目计划》模板 |
| 60 | 1.3.2.2 | WBS、OBS的绘制 | manual | 0.6d | 2018-09-24 19:00 A | 2018-09-27 20:00 A | 59 | 100% |  |  |  | start no earlier than 2018-09-24 19:00 | 蓝舒雯 | 3h | 3h | WBS、OBS |
| 61 | 1.3.2.3 | 制定《需求工程项目计划》第一部分 | manual | 0.4d | 2018-09-25 19:00 A | 2018-09-26 20:00 A | 59, 6 | 100% |  |  |  |  | 赵佳锋 | 2h | 2h | 《需求工程项目计划》初稿 |
| 62 | *.1.8 | 制定《需求工程项目计划》第二部分 | manual | 0.38d | 2018-09-28 19:30 A | 2018-10-07 18:30 | 59 | 100% |  |  | 2018-10-07 18:24 |  | 赵佳锋 | 1h | 1h | 《需求工程项目计划》初稿 |
| 63 | *.1.9 | 修订《需求工程项目计划》 | manual | 0.2d | 2018-09-29 19:00 A | 2018-10-07 19:00 A | 61, 62 | 100% |  |  |  |  | 陈铭阳 | 1h | 1h | 《需求工程项目计划》终稿 |
| 64 | 1.3.2.6 | 第一次修订需求工程计划 | manual | 0.2d | 2018-11-02 19:00 A | 2018-11-02 20:00 A | 63 | 100% |  |  |  |  | 赵唯皓 | 1h | 1h | 修订记录 |
| 65 | 1.3.2.7 | 审核第一次修订后的需求工程计划 | manual | 0.2d | 2018-11-03 19:00 A | 2018-11-03 20:00 A | 64 | 100% |  |  |  |  | 陈铭阳 | 1h | 1h | 《需求工程计划》修订V1 |
| 66 | 1.3.2.8 | 第二次修订需求工程计划 | manual | 0.2d | 2018-11-09 19:00 A | 2018-11-12 20:00 A | 65 | 100% |  |  |  |  | 陈铭阳 | 1h | 1h | 修订记录 |
| 67 | 1.3.2.9 | 审核第二次修订后的需求工程计划 | manual | 0.2d | 2018-11-10 19:00 A | 2018-11-12 20:00 A | 66 | 100% |  |  |  |  | 赵唯皓 | 1h | 1h | 《需求工程计划》修订V2 |
| 68 | 1.3.2.10 | 第三次修订需求工程计划 | manual | 0.2d | 2018-11-16 19:00 A | 2018-11-16 20:00 A | 67 | 100% |  |  |  |  | 赵唯皓 | 1h | 1h | 修订记录 |
| 69 | 1.3.2.11 | 审核第三次修订后的需求工程计划 | manual | 0.2d | 2018-11-17 19:00 A | 2018-11-17 20:00 A | 68 | 100% |  |  |  |  | 陈铭阳 | 1h | 1h | 《需求工程计划》修订V3 |
| 70 | 1.3.2.12 | 修订WBS | manual | 0.2d | 2018-11-16 19:00 A | 2018-11-16 20:00 A | 60 | 100% |  |  |  |  | 蓝舒雯 | 1h | 1h | WBS |
| 71 | 1.3.2.13 | 修订OBS | manual | 0.2d | 2018-11-17 19:00 A | 2018-11-17 20:00 A | 60 | 100% |  |  |  |  | 蓝舒雯 | 1h | 1h | OBS |
| 72 | 1.3.2.14 | 第四次修改需求工程计划 | manual | 0.2d | 2018-11-24 19:00 A | 2018-11-24 20:00 A | 69, 70, 71 | 100% |  |  |  |  | 刘祺 | 1h | 1h | 《需求工程计划》修订V4 |
| 73 | 1.3.2.15 | 第五次需求工程计划修订 | manual | 0.6d | 2018-11-29 21:00 A | 2018-11-29 23:59 A | 72 | 100% |  |  |  |  | 刘祺 | 2.98h | 2.98h | 《需求工程计划》修订V5 |
| 74 | 1.3.2.16 | 第六次需求工程计划修订 | manual | 0.2d | 2018-12-12 19:00 A | 2018-12-12 20:00 A | 73 | 100% |  |  |  |  | 刘祺 | 1h | 1h | 《需求工程计划》修订 |
| 75 | 1.3.3 | **《项目章程》编写和审查** |  | 9.7d | 2018-10-15 19:00 | 2018-12-01 11:00 |  | 100% |  | 2018-10-16 19:00 | 2018-12-12 20:00 |  |  | 5h | 5h |  |
| 76 | 1.3.3.1 | 《项目章程模板》寻找 | manual | 0.2d | 2018-10-16 19:00 A | 2018-10-16 20:00 A | 4 | 100% |  |  |  |  | 刘祺 | 1h | 1h | 《项目章程》模板 |
| 77 | 1.3.3.2 | 制定《项目章程》 | manual | 0.2d | 2018-10-16 19:00 A | 2018-10-16 20:00 A | 76 | 100% |  |  |  |  | 赵佳锋 | 1h | 1h | 《项目章程》初稿 |
| 78 | 1.3.3.3 | 《项目章程》审核修订1 | manual | 0.2d | 2018-10-20 19:00 A | 2018-10-20 20:00 A | 77 | 100% |  |  |  |  | 赵唯皓 | 1h | 1h | 《项目章程》V1 |
| 79 | 1.3.3.4 | 《项目章程》修订2 | manual | 0.2d | 2018-11-30 19:00 A | 2018-11-30 20:00 A | 78 | 100% |  |  |  |  | 赵佳锋 | 1h | 1h | 《项目章程》V2 |
| 80 | 1.3.3.5 | 《项目章程》修订3 | manual | 0.2d | 2018-12-12 19:00 A | 2018-12-12 20:00 A | 79 | 100% |  |  |  |  | 赵佳锋 | 1h | 1h | 《项目章程》V3 |
| 81 | *.3 | **项目执行** |  | 6.9d | 2018-11-05 19:00 A | 2018-12-03 20:00 | 51 | 99% | 0.04d |  |  |  |  | 382.8h | 375.8h |  |
| 82 | 1.4.1 | **需求获取** |  | 14.7d | 2018-11-05 19:00 A | 2018-12-31 20:00 |  | 100% |  |  | 2019-01-07 20:00 |  |  | 75.2h | 75.2h |  |
| 83 | *.3.3 | **定义及初步编写项目视图与范围** |  | 1d | 2018-11-05 19:00 A | 2018-11-09 20:00 |  | 100% |  |  | 2018-11-10 20:00 |  |  | 7h | 7h |  |
| 84 | 1.4.1.1.1 | 寻找愿景和范围文档模板 | manual | 0.2d | 2018-11-05 19:00 A | 2018-11-05 20:00 A | 64 | 100% |  |  |  |  | 蓝舒雯 | 1h | 1h | 《愿景与范围文档》模板 |
| 85 | 1.4.1.1.2 | 愿景和范围文档第一部分 | manual | 0.2d | 2018-11-06 19:00 A | 2018-11-06 20:00 A | 84 | 100% |  |  |  |  | 刘祺 | 1h | 1h | 《愿景与范围文档》第一部分 |
| 86 | 1.4.1.1.3 | 愿景和范围文档第二部分 | manual | 0.4d | 2018-11-06 19:00 A | 2018-11-09 20:00 A | 84 | 100% |  |  |  |  | 陈铭阳 | 2h | 2h | 《愿景与范围文档》第二部分 |
| 87 | 1.4.1.1.4 | 愿景和范围文档第三部分 | manual | 0.4d | 2018-11-06 19:00 A | 2018-11-07 20:00 A | 84 | 100% |  |  |  |  | 蓝舒雯 | 2h | 2h | 《愿景与范围文档》第三部分 |
| 88 | 1.4.1.1.5 | 汇总初步愿景与范围文档 | manual | 0.2d | 2018-11-10 19:00 A | 2018-11-10 20:00 A | 85, 86, 87 | 100% |  |  |  |  | 刘祺 | 1h | 1h | 《愿景与范围文档》初稿 |

| ID | WBS | Task | Type | Duration | Start | Finish | Predecessors | Complete | Resources | Work | Actual work | 最终交付物 |
| --- | --- | --- | --- | --- | --- | --- | --- | --- | --- | --- | --- | --- |
| 89 | 1.4.1.2 | **修改愿景与范围文档** |  | 3.6d | 2018-11-12 19:00 A | 2018-11-29 16:00 A | 88 | 100% |  | 10h | 10h |  |
| 90 | 1.4.1.2.1 | 绘制范围可视化表示--特性树 | manual | 0.4d | 2018-11-12 19:00 A | 2018-11-14 20:00 A | 88 | 100% | 陈铭阳 | 2h | 2h | 《特性树》 |
| 91 | 1.4.1.2.2 | 绘制范围可视化表示--关联图 | manual | 0.6d | 2018-11-12 19:00 A | 2018-11-14 20:00 A | 88 | 100% | 蓝舒雯 | 3h | 3h | 《关联图》 |
| 92 | 1.4.1.2.3 | 绘制范围可视化表示--生态系统图 | manual | 0.4d | 2018-11-13 19:00 A | 2018-11-14 20:00 A | 88 | 100% | 赵唯皓 | 2h | 2h | 《生态系统图》 |
| 93 | 1.4.1.2.4 | 绘制范围可视化表示--事件列表 | manual | 0.2d | 2018-11-16 19:00 A | 2018-11-16 20:00 A | 90, 91, 92 | 100% | 赵佳锋 | 1h | 1h | 《事件列表》 |
| 94 | 1.4.1.2.5 | 愿景与范围文档修改1 | manual | 0.2d | 2018-11-28 19:00 A | 2018-11-28 20:00 A | 93 | 100% | 赵佳锋 | 1h | 1h | 《愿景与范围文档-修订1》 |
| 95 | 1.4.1.2.6 | 愿景与范围文档修改2 | manual | 0.2d | 2018-11-29 15:00 A | 2018-11-29 16:00 A | 94 | 100% | 刘祺 | 1h | 1h | 《愿景与范围文档-修订2》 |
| 96 | 1.4.1.3 | 用户群分类 | manual | 0.2d | 2018-11-13 19:00 A | 2018-11-13 20:00 A | 88 | 100% | 赵佳锋 | 0.2h | 0.2h | 《用户群分类》文档 |
| 97 | 1.4.1.4 | 发送客户访谈邀请函 | manual | 0.2d | 2018-11-21 19:00 A | 2018-11-21 20:00 A | 88, 96 | 100% | 刘祺 | 1h | 1h | 《邀请函》 |
| 98 | *.3.5 | 客户需求获取访谈 | manual | 0.2d | 2018-12-04 09:00 A | 2018-12-04 10:00 A | 97 | 100% | 赵佳锋; 刘祺; 赵唯皓; 蓝舒雯 | 4h | 4h | 访谈记录 |
| 99 | 1.4.1.6 | 发送客户访谈邀请函2 | manual | 0.2d | 2018-12-02 19:00 A | 2018-12-02 20:00 A | 98 | 100% | 蓝舒雯 | 1h | 1h | 邀请函 |
| 100 | 1.4.1.7 | 客户确认愿景与范围文档 | manual | 0.2d | 2018-12-19 19:00 A | 2018-12-19 20:00 A | 99 | 100% | 赵佳锋; 蓝舒雯; 刘祺; 陈铭阳; 赵唯皓 | 5h | 5h | 访谈记录 |
| 101 | 1.4.1.8 | 发送教师访谈邀请函 | manual | 0.2d | 2018-12-01 19:00 A | 2018-12-01 20:00 A | 100 | 100% |  | 1h | 1h | 《邀请函》 |
| 102 | 1.4.1.9 | 管理员访谈及界面确认 | manual | 0.2d | 2018-12-22 18:00 A | 2018-12-22 19:00 A | 100 | 100% | 陈铭阳; 蓝舒雯; 刘祺; 赵佳锋; 赵唯皓 | 5h | 5h | 管理员访谈记录 |
| 103 | 1.4.1.10 | 用例图绘制1 | manual | 0.6d | 2018-12-10 19:00 A | 2018-12-12 10:00 A | 100 | 100% | 赵佳锋 | 3h | 3h | 用例图1 |
| 104 | 1.4.1.11 | 用例图绘制2 | manual | 0.4d | 2018-12-14 19:00 A | 2018-12-15 20:00 A | 103 | 100% | 赵佳锋 | 2h | 2h | 用例图2 |
| 105 | 1.4.1.12 | 制作问卷调查1 | manual | 0.6d | 2018-12-10 19:00 A | 2018-12-12 10:00 A | 100 | 100% | 蓝舒雯 | 3h | 3h | 调查问卷 |
| 106 | 1.4.1.13 | 发放问卷调查2 | manual | 0.4d | 2018-12-14 19:00 A | 2018-12-15 20:00 A | 105 | 100% | 蓝舒雯 | 2h | 2h | 问卷结果 |
| 107 | 1.4.1.14 | 发送教师访谈邀请函 | manual | 0.2d | 2018-12-17 19:00 A | 2018-12-17 20:00 A | 101 | 100% | 刘祺 | 1h | 1h | 《邀请函》 |
| 108 | 1.4.1.15 | 教师界面确认 | manual | 0.2d | 2018-12-19 19:00 A | 2018-12-19 20:00 A | 107 | 100% | 陈铭阳; 蓝舒雯; 刘祺; 赵佳锋; 赵唯皓 | 5h | 5h | 访谈记录 |
| 109 | 1.4.1.16 | 管理员界面确认2 | manual | 0.2d | 2018-12-27 19:00 A | 2018-12-27 20:00 A | 102 | 100% | 陈铭阳; 蓝舒雯; 刘祺; 赵佳锋; 赵唯皓 | 5h | 5h | 管理员访谈记录 |
| 110 | 1.4.1.17 | 学生访谈及界面确认 | manual | 0.4d | 2019-01-04 18:00 A | 2019-01-04 20:00 A | 100, 106 | 100% | 陈铭阳; 赵佳锋 | 4h | 4h | 学生访谈记录 |
| 111 | 1.4.1.18 | 教师界面确认 | manual | 0.2d | 2019-01-05 19:00 A | 2019-01-05 20:00 A | 108 | 100% | 陈铭阳; 蓝舒雯; 刘祺; 赵佳锋; 赵唯皓 | 5h | 5h | 教师访谈记录 |
| 112 | 1.4.1.19 | JAD会议各成员邀请函发放 | manual | 0.2d | 2019-01-05 20:00 A | 2019-01-05 21:00 A | 109, 108, 110, 111 | 100% | 刘祺 | 1h | 1h | 《邀请函》 |
| 113 | *.3.7 | 召开应用程序开发联系会议 | manual | 0.4d | 2019-01-07 18:00 A | 2019-01-07 20:00 A | 112 | 100% | 赵佳锋; 蓝舒雯; 刘祺; 赵唯皓; 陈铭阳 | 10h | 10h | 《会议总结》 |

| ID | WBS | Task | Type | Duration | Start | Finish | Predecessors | Complete | Actual start | Actual finish | Resources | Work | Actual work | 最终交付物 |
| --- | --- | --- | --- | --- | --- | --- | --- | --- | --- | --- | --- | --- | --- | --- |
| 114 | 1.4.2 | **需求分析** |  | 9.4d | 2018-12-03 08:00 | 2018-12-28 20:00 | 82 | 100% | 2018-11-16 19:00 | 2019-01-11 20:00 |  | 37h | 37h |  |
| 115 | 1.4.2.1 | **界面原型制作及更改** |  | 0.4d | 2018-12-18 19:00 | 2018-12-19 20:00 |  | 100% | 2018-11-16 19:00 | 2019-01-01 21:00 |  | 26h | 26h |  |
| 116 | *.3.4 | 界面初步设计1 | manual | 0.2d | 2018-11-16 19:00 A | 2018-11-26 19:30 A | 98 | 100% |  |  | 陈铭阳 | 1h | 1h | 界面原型-初步1 |
| 117 | 1.4.2.1.2 | 界面初步设计2 | manual | 0.4d | 2018-11-19 19:00 A | 2018-11-20 20:00 A | 116 | 100% |  |  | 陈铭阳 | 2h | 2h | 界面原型-初步2 |
| 118 | 1.4.2.1.3 | web端的界面原型修改 | manual | 0.4d | 2018-11-26 19:30 A | 2018-11-28 19:30 A | 117 | 100% |  |  | 陈铭阳 | 2h | 2h | web端的界面原型 |
| 119 | 1.4.2.1.4 | web端的界面原型修改 | manual | 0.4d | 2018-12-23 19:00 A | 2018-12-24 20:00 A | 118 | 100% |  |  | 陈铭阳 | 2h | 2h | web端的界面原型 |
| 120 | 1.4.2.1.5 | web端的界面原型修改 | manual | 0.4d | 2019-01-01 19:00 A | 2019-01-01 21:00 A | 119 | 100% |  |  | 赵唯皓 | 2h | 2h | web端的界面原型 |
| 121 | 1.4.2.1.6 | app端的界面原型制作 | manual | 0.4d | 2018-12-28 19:00 A | 2018-12-29 20:00 A | 120 | 100% |  |  | 赵唯皓 | 3h | 3h | app端界面原型 |
| 122 | 1.4.2.1.7 | app端的界面原型制作 | manual | 1d | 2019-01-01 08:00 A | 2019-01-01 13:00 A | 121 | 100% |  |  | 陈铭阳 | 5h | 5h | app端界面原型修改 |
| 123 | 1.4.2.1.8 | 管理员的web端界面原型 | manual | 0.8d | 2018-12-17 17:00 A | 2018-12-17 21:00 A | 100 | 100% |  |  | 蓝舒雯 | 4h | 4h | 管理员Web界面 |
| 124 | 1.4.2.1.9 | 管理员的web端界面原型 | manual | 0.6d | 2018-12-24 19:00 A | 2018-12-26 20:00 A | 123 | 100% |  |  | 蓝舒雯 | 3h | 3h | 管理员Web界面 |
| 125 | 1.4.2.1.10 | 管理员的web端界面原型修改 | manual | 0.4d | 2018-12-28 19:00 A | 2018-12-29 20:00 A | 124 | 100% |  |  | 蓝舒雯 | 2h | 2h | 管理员Web界面 |
| 126 | 1.4.2.2 | **分析需求可行性** |  | 0d | 2019-01-08 19:00 A | 2019-01-08 19:00 A |  | 100% |  |  |  |  |  |  |
| 127 | 1.4.2.2.1 | 分析需求可行性 | milestone, manual | 0d | 2019-01-08 19:00 A | 2019-01-08 19:00 A | 113 | 100% |  |  | 赵唯皓 |  |  | 《需求可行性分析》文档 |
| 128 | 1.4.2.3 | **QFD打分表制作及发放** |  | 0.8d | 2018-12-22 19:30 | 2018-12-24 19:30 |  | 100% | 2019-01-07 19:00 | 2019-01-09 20:00 |  | 4h | 4h |  |
| 129 | 1.4.2.3.1 | QFD打分表制作及发送（教师） | manual | 0.2d | 2019-01-07 19:00 A | 2019-01-07 20:00 A | 113, 127 | 100% |  |  | 赵唯皓 | 1h | 1h | 《教师需求优先级打分表》 |
| 130 | 1.4.2.3.2 | QFD打分表制作及发送（管理员） | manual | 0.2d | 2019-01-09 19:00 A | 2019-01-09 20:00 A | 113, 127 | 100% |  |  | 蓝舒雯 | 1h | 1h | 《管理员需求优先级打分表》 |
| 131 | 1.4.2.3.3 | QFD打分表制作及发送（游客） | manual | 0.2d | 2019-01-09 19:00 A | 2019-01-09 20:00 A | 113, 127 | 100% |  |  | 陈铭阳 | 1h | 1h | 《游客需求优先级打分表》 |
| 132 | 1.4.2.3.4 | QFD打分表制作及发送（学生） | manual | 0.2d | 2019-01-09 19:00 A | 2019-01-09 20:00 A | 131, 113, 127 | 100% |  |  | 赵佳锋 | 1h | 1h | 《学生需求优先级打分表》 |
| 133 | 1.4.2.4 | QFD打分表整合 | manual | 0.2d | 2019-01-10 20:00 A | 2019-01-10 21:00 A | 129, 130, 131, 132 | 100% |  |  | 刘祺 | 1h | 1h | 《需求优先级打分表》 |
| 134 | 1.4.2.5 | 计算需求优先级 | manual | 0.2d | 2019-01-11 19:00 A | 2019-01-11 20:00 A | 133 | 100% |  |  | 赵唯皓 | 2h | 2h | 《需求优先级打分表整理 |
| 135 | 1.4.2.6 | **编写数据字典** |  | 0.4d | 2018-12-18 19:00 A | 2018-12-19 20:00 |  | 100% |  | 2018-12-27 20:00 |  | 4h | 4h |  |
| 136 | 1.4.2.6.1 | 编写数据字典 | manual | 0.4d | 2018-12-18 19:00 A | 2018-12-25 20:00 A |  | 100% |  |  | 蓝舒雯 | 2h | 2h | 《数据字典1》 |
| 137 | 1.4.2.6.2 | 修订数据字典 | manual | 0.4d | 2018-12-21 19:00 A | 2018-12-27 20:00 A | 136 | 100% |  |  | 蓝舒雯 | 2h | 2h | 《数据字典2》 |

| ID | WBS | Task | Type | Duration | Start | Finish | Predecessors | Complete | Remaining | Actual start | Actual finish | Constraint | Resources | Work | Actual work | 最终交付物 |
| --- | --- | --- | --- | --- | --- | --- | --- | --- | --- | --- | --- | --- | --- | --- | --- | --- |
| 138 | 1.4.3 | **需求规格说明** |  | 7.9d | 2018-12-01 19:00 | 2018-12-30 19:30 | 114 | 99% | 0.07d | 2018-12-15 19:00 |  |  |  | 139h | 134h |  |
| 139 | 1.4.3.1 | **采用需求规格说明模板** |  | 4d | 2018-12-15 19:00 A | 2018-12-18 11:00 |  | 100% |  |  | 2018-12-20 20:00 |  |  | 2h | 2h |  |
| 140 | 1.4.3.1.1 | 查找需求规格说明书编写规范 | manual | 0.2d | 2018-12-15 19:00 A | 2018-12-20 20:00 A | 100 | 100% |  |  |  |  | 刘祺 | 1h | 1h | 《SRS》模板 |
| 141 | 1.4.3.1.2 | SRS第一章内容 | manual | 0.2d | 2018-12-17 20:00 A | 2018-12-17 21:00 A | 140 | 100% |  |  |  |  | 刘祺 | 1h | 1h | SRS第一章内容 |
| 142 | 1.4.3.2 | 识别需求来源 | manual | 0.2d | 2018-12-17 19:00 A | 2018-12-17 20:00 A | 140 | 100% |  |  |  |  | 赵佳锋 | 1h | 1h | 需求来源 |
| 143 | 1.4.3.3 | 需求唯一编号 | manual | 0.2d | 2018-12-17 18:00 A | 2018-12-17 19:00 A | 140 | 100% |  |  |  |  | 赵唯皓 | 1h | 1h | 需求编号 |
| 144 | 1.4.3.4 | 记录业务规范 | manual | 0.2d | 2018-12-17 18:00 A | 2018-12-17 19:00 A | 140 | 100% |  |  |  |  | 刘祺 | 1h | 1h | 业务规范 |
| 145 | 1.4.3.5 | **《SRS》编写第一版本** |  | 3.2d | 2018-12-16 08:00 A | 2018-12-23 12:00 A | 139 | 100% |  |  |  |  |  | 52.2h | 52.2h |  |
| 146 | 1.4.3.5.1 | **编写功能需求1** |  | 1.6d | 2018-12-18 18:00 A | 2018-12-23 11:00 | 139 | 100% |  |  | 2018-12-22 20:00 |  |  | 18h | 18h |  |
| 147 | 1.4.3.5.1.1 | 游客功能需求 |  | 1d | 2018-12-18 19:00 A | 2018-12-22 20:00 A | 142, 143, 144 | 100% |  |  |  | start no earlier than 2018-12-18 19:00 | 刘祺 [80%] | 4h | 4h | 游客用例 |
| 148 | 1.4.3.5.1.2 | 教师功能需求 | manual | 1d | 2018-12-18 19:00 A | 2018-12-22 20:00 A | 142, 143, 144 | 100% |  |  |  |  | 赵唯皓 | 4h | 4h | 教师用例 |
| 149 | 1.4.3.5.1.3 | 学生功能需求 | manual | 1d | 2018-12-18 18:00 A | 2018-12-21 20:00 A | 142, 143, 144 | 100% |  |  |  |  | 赵佳锋 | 5h | 5h | 学生用例 |
| 150 | 1.4.3.5.1.4 | 管理员功能需求 | manual | 1d | 2018-12-18 18:00 A | 2018-12-21 20:00 A | 142, 143, 144 | 100% |  |  |  |  | 蓝舒雯 | 5h | 5h | 管理员用例 |
| 151 | 1.4.3.5.2 | 描述非功能性需求 | manual | 0.6d | 2018-12-18 18:00 A | 2018-12-19 20:00 A | 140 | 100% |  |  |  |  | 刘祺 | 1.2h | 1.2h | 非功能性需求部分文档 |
| 152 | 1.4.3.5.3 | 用例图修改 | manual | 1d | 2018-12-16 08:00 A | 2018-12-17 18:00 A | 104 | 100% |  |  |  |  | 赵佳锋; 赵唯皓; 蓝舒雯 | 15h | 15h | 用例图 |
| 153 | 1.4.3.5.4 | 活动图 | manual | 2d | 2018-12-17 19:00 A | 2018-12-23 12:00 A | 140 | 100% |  |  |  |  | 蓝舒雯; 赵佳锋; 赵唯皓 | 15h | 15h | 活动图 |
| 154 | 1.4.3.5.5 | 继续编写SRS文档剩余部分 | manual | 1d | 2018-12-21 19:00 A | 2018-12-23 12:00 A | 141 | 100% |  |  |  |  | 刘祺 | 3h | 3h | SRS剩余部分文档 |
| 155 | 1.4.3.6 | **《SRS》编写第二版本** |  | 2.2d | 2018-12-24 18:00 A | 2019-01-01 18:00 A | 145 | 100% |  |  |  |  |  | 40.8h | 40.8h |  |
| 156 | 1.4.3.6.1 | **编写功能需求2** |  | 1d | 2018-12-24 18:00 A | 2018-12-28 20:00 A | 146 | 100% |  |  |  |  |  | 20h | 20h |  |
| 157 | 1.4.3.6.1.1 | 游客功能需求 |  | 1d | 2018-12-24 19:00 A | 2018-12-28 20:00 A | 147 | 100% |  |  |  |  | 刘祺 | 5h | 5h | 游客用例补充 |
| 158 | 1.4.3.6.1.2 | 教师功能需求 | manual | 1d | 2018-12-24 18:00 A | 2018-12-27 20:00 A | 148 | 100% |  |  |  |  | 赵唯皓 | 5h | 5h | 教师用例补充 |
| 159 | 1.4.3.6.1.3 | 学生功能需求 | manual | 1d | 2018-12-24 19:00 A | 2018-12-28 20:00 A | 149 | 100% |  |  |  |  | 赵佳锋 | 5h | 5h | 学生用例补充 |
| 160 | 1.4.3.6.1.4 | 管理员功能需求 | manual | 1d | 2018-12-24 18:00 A | 2018-12-27 20:00 A | 150 | 100% |  |  |  |  | 蓝舒雯 | 5h | 5h | 管理员用例补充 |
| 161 | 1.4.3.6.2 | 描述非功能性需求 | manual | 0.4d | 2018-12-24 19:00 A | 2018-12-25 20:00 A | 151 | 100% |  |  |  |  | 刘祺 | 0.8h | 0.8h | 非功能性需求部分文档修订 |
| 162 | 1.4.3.6.3 | 对话框图 | manual | 1.8d | 2018-12-26 19:00 A | 2019-01-01 18:00 A |  | 100% |  |  |  |  | 蓝舒雯; 赵佳锋; 赵唯皓 | 15h | 15h | 对话框 |
| 163 | 1.4.3.6.4 | 继续编写SRS文档剩余部分 | manual | 1d | 2018-12-26 19:00 A | 2018-12-31 18:00 A | 154 | 100% |  |  |  |  | 刘祺 | 5h | 5h | SRS剩余部分文档补充 |

| ID | WBS | Task | Type | Duration | Start | Finish | Predecessors | Complete | Remaining | Actual start | Actual finish | Resources | Work | Actual work | 最终交付物 |
| --- | --- | --- | --- | --- | --- | --- | --- | --- | --- | --- | --- | --- | --- | --- | --- |
| 164 | 1.4.3.7 | **《SRS》编写第三版本** |  | 1.4d | 2019-01-01 18:00 A | 2019-01-02 19:00 A | 155 | 100% |  |  |  |  | 35h | 35h |  |
| 165 | 1.4.3.7.1 | **修改功能需求** |  | 1.4d | 2019-01-01 18:00 A | 2019-01-02 19:00 A | 156 | 100% |  |  |  |  | 20h | 20h |  |
| 166 | 1.4.3.7.1.1 | 游客功能需求 |  | 1d | 2019-01-01 18:00 A | 2019-01-01 23:00 A | 157 | 100% |  |  |  | 陈铭阳 | 5h | 5h | 游客用例修订 |
| 167 | 1.4.3.7.1.2 | 教师功能需求 | manual | 1d | 2019-01-01 19:00 A | 2019-01-02 18:00 A | 158 | 100% |  |  |  | 赵唯皓 | 5h | 5h | 教师用例修订 |
| 168 | 1.4.3.7.1.3 | 学生功能需求 | manual | 1d | 2019-01-01 20:00 A | 2019-01-02 19:00 A | 159 | 100% |  |  |  | 赵佳锋 | 5h | 5h | 学生用例修订 |
| 169 | 1.4.3.7.1.4 | 管理员功能需求 | manual | 1d | 2019-01-01 19:00 A | 2019-01-02 18:00 A | 160 | 100% |  |  |  | 蓝舒雯 | 5h | 5h | 管理员用例修订 |
| 170 | 1.4.3.7.2 | 修改非功能性需求 | manual | 1d | 2019-01-01 19:00 A | 2019-01-02 18:00 A | 161 | 100% |  |  |  | 刘祺 | 5h | 5h | 非功能性需求部分文档修订 |
| 171 | 1.4.3.7.3 | 修改各种图 | manual | 1d | 2019-01-01 19:00 A | 2019-01-02 18:00 A | 152, 162, 153 | 100% |  |  |  | 陈铭阳 | 5h | 5h | 修改的各种图 |
| 172 | 1.4.3.7.4 | 修改SRS文档其余部分 | manual | 1d | 2019-01-01 19:00 A | 2019-01-02 18:00 A | 163 | 100% |  |  |  | 陈铭阳 | 5h | 5h | SRS剩余部分文档补充 |
| 173 | 1.4.3.8 | 初定需求规格说明书 | manual | 0.2d | 2019-01-04 19:00 A | 2019-01-04 20:00 | 166, 167, 168, 169, 170, 171, 172, 134, 164, 165 |  | 0.2d |  |  | 陈铭阳; 蓝舒雯; 刘祺; 赵佳锋; 赵唯皓 | 5h |  | 《需求规格说明书-初稿》 |
| 174 | 1.4.3.9 | 《需求规格说明书》评审后修改确认发布版本1 | manual | 0.2d | 2019-01-11 19:00 A | 2019-01-11 20:00 A | 173 | 100% |  |  |  | 刘祺 | 1h | 1h | 《需求规格说明书》 |
| 175 | 1.4.4 | **需求规格审核** |  | 6d | 2018-12-17 08:00 | 2018-12-31 20:00 | 138 | 99% | 0.06d | 2018-12-28 18:30 |  |  | 97h | 95h |  |
| 176 | 1.4.4.1 | **编写测试用例** |  | 1.2d | 2019-01-01 17:00 | 2019-01-01 23:00 | 137 | 100% |  | 2018-12-28 19:30 | 2019-01-02 18:00 |  | 25h | 25h |  |
| 177 | 1.4.4.1.1 | 编写游客测试用例 | manual | 1d | 2018-12-28 19:30 A | 2018-12-31 20:30 A | 137 | 100% |  |  |  | 陈铭阳 | 5h | 5h | 《游客测试用例》 |
| 178 | 1.4.4.1.2 | 编写教师测试用例 | manual | 1d | 2018-12-28 19:30 A | 2018-12-31 20:30 A | 137 | 100% |  |  |  | 赵唯皓 | 5h | 5h | 《教师测试用例》 |
| 179 | 1.4.4.1.3 | 编写学生测试用例 | manual | 1d | 2018-12-28 19:30 A | 2018-12-31 20:30 A | 137 | 100% |  |  |  | 赵佳锋 | 5h | 5h | 《学生测试用例》 |
| 180 | 1.4.4.1.4 | 编写管理员测试用例 | manual | 1d | 2018-12-28 20:30 A | 2018-12-31 17:30 A | 137 | 100% |  |  |  | 蓝舒雯 | 5h | 5h | 《管理员测试用例》 |
| 181 | 1.4.4.1.5 | 整合测试用例 | manual | 1d | 2019-01-01 19:00 A | 2019-01-02 18:00 A | 177, 178, 179, 180 | 100% |  |  |  | 刘祺 | 5h | 5h | 《测试用例》 |
| 182 | 1.4.4.2 | **修订测试用例** |  | 0.6d | 2019-01-02 17:00 | 2019-01-02 20:00 | 176 | 95% | 0.03d | 2019-01-04 19:30 |  |  | 22h | 20h |  |
| 183 | 1.4.4.2.1 | 修改游客测试用例 | manual | 1d | 2019-01-04 19:30 A | 2019-01-05 17:30 A | 181 | 100% |  |  |  | 陈铭阳 | 5h | 5h | 《游客测试用例》 |
| 184 | 1.4.4.2.2 | 修改教师测试用例 | manual | 1d | 2019-01-04 19:30 A | 2019-01-05 17:30 A | 181 | 100% |  |  |  | 赵唯皓 | 5h | 5h | 《教师测试用例》 |
| 185 | 1.4.4.2.3 | 修改学生测试用例 | manual | 1d | 2019-01-04 19:30 A | 2019-01-05 17:30 A | 181 | 100% |  |  |  | 赵佳锋 | 5h | 5h | 《学生测试用例》 |
| 186 | 1.4.4.2.4 | 修改管理员测试用例 | manual | 1d | 2019-01-04 21:30 A | 2019-01-05 19:30 A | 181 | 100% |  |  |  | 蓝舒雯 | 5h | 5h | 《管理员测试用例》 |
| 187 | 1.4.4.2.5 | 整合修订后的测试用例 | manual | 0.2d | 2019-01-06 19:00 A | 2019-01-06 20:00 | 183, 184, 185, 186 |  | 0.2d |  |  | 赵佳锋; 赵唯皓 | 2h |  | 《测试用例》修订 |

| ID | WBS | Task | Type | Duration | Start | Finish | Predecessors | Complete | Remaining | Actual start | Actual finish | Total slack | Resources | Work | Actual work | 最终交付物 |
| --- | --- | --- | --- | --- | --- | --- | --- | --- | --- | --- | --- | --- | --- | --- | --- | --- |
| 188 | 1.4.4.3 | **编写用户手册** |  | 0.2d | 2019-01-02 20:00 | 2019-01-02 21:00 | 187 | 100% |  | 2018-12-28 18:30 | 2019-01-02 18:30 |  |  | 25h | 25h |  |
| 189 | 1.4.4.3.1 | 编写游客用户手册 | manual | 1d | 2018-12-28 19:30 A | 2018-12-31 20:30 A | 137 | 100% |  |  |  |  | 刘祺 | 5h | 5h | 《游客部分用户手册》 |
| 190 | 1.4.4.3.2 | 编写教师用户手册 | manual | 1d | 2018-12-28 19:30 A | 2018-12-31 20:30 A | 137 | 100% |  |  |  |  | 刘祺 | 5h | 5h | 《教师部分用户手册》 |
| 191 | 1.4.4.3.3 | 编写学生用户手册 | manual | 1d | 2018-12-28 18:30 A | 2018-12-31 19:30 A | 137 | 100% |  |  |  |  | 刘祺 | 5h | 5h | 《学生部分用户手册》 |
| 192 | 1.4.4.3.4 | 编写管理员用户手册 | manual | 1d | 2018-12-28 19:30 A | 2018-12-31 20:30 A | 137 | 100% |  |  |  |  | 刘祺 | 5h | 5h | 《管理员部分用户手册》 |
| 193 | 1.4.4.3.5 | 整合用户手册 | manual | 1d | 2019-01-01 19:30 A | 2019-01-02 18:30 A | 189, 190, 191, 192 | 100% |  |  |  |  | 赵唯皓 | 5h | 5h | 《用户手册》 |
| 194 | 1.4.4.4 | **修订用户手册** |  | 0.2d | 2019-01-02 20:00 | 2019-01-02 21:00 | 187 | 100% |  | 2019-01-02 18:30 | 2019-01-09 20:00 |  |  | 25h | 25h |  |
| 195 | 1.4.4.4.1 | 编写游客用户手册 | manual | 1d | 2019-01-02 18:30 A | 2019-01-03 19:30 A | 193 | 100% |  |  |  |  | 陈铭阳 | 5h | 5h | 《游客部分用户手册》 |
| 196 | 1.4.4.4.2 | 编写教师用户手册 | manual | 1d | 2019-01-03 19:30 A | 2019-01-04 19:30 A | 193 | 100% |  |  |  |  | 赵唯皓 | 5h | 5h | 《教师部分用户手册》 |
| 197 | 1.4.4.4.3 | 编写学生用户手册 | manual | 1d | 2019-01-02 19:00 A | 2019-01-03 20:00 A | 193 | 100% |  |  |  |  | 赵佳锋 | 5h | 5h | 《学生部分用户手册》 |
| 198 | 1.4.4.4.4 | 编写管理员用户手册 | manual | 1d | 2019-01-02 20:30 A | 2019-01-04 16:30 A | 193 | 100% |  |  |  |  | 蓝舒雯 | 5h | 5h | 《管理员部分用户手册》 |
| 199 | 1.4.4.4.5 | 整合修订后的用户手册 | manual | 1d | 2019-01-06 19:00 A | 2019-01-09 20:00 A | 195, 196, 197, 198 | 100% |  |  |  |  | 刘祺 | 5h | 5h | 《用户手册》 |
| 200 | 1.4.5 | **需求管理** |  | 7d | 2019-01-07 09:00 | 2019-01-13 20:00 | 100 | 99% | 0d | 2019-01-07 18:00 |  |  |  | 34.6h | 34.6h |  |
| 201 | 1.4.5.1 | **需求管理工具使用** |  | 2d | 2019-01-07 18:00 A | 2019-01-11 20:00 A | 100 | 100% |  |  |  |  |  | 9.6h | 9.6h |  |
| 202 | 1.4.5.1.1 | 选择安装需求管理工具 | manual | 0.8d | 2019-01-07 18:00 A | 2019-01-09 20:00 A | 100 | 100% |  |  |  |  | 陈铭阳 | 2h | 2h | 需求管理工具 |
| 203 | 1.4.5.1.2 | 学习使用并导入需求 | manual | 0.4d | 2019-01-08 19:00 A | 2019-01-08 21:00 A | 202 | 100% |  |  |  |  | 陈铭阳 | 2h | 2h | 需求导入 |
| 204 | 1.4.5.1.3 | 进行需求的跟踪记录 | manual | 0.6d | 2019-01-09 19:00 A | 2019-01-10 20:00 A | 203 | 100% |  |  |  |  | 陈铭阳 | 0.6h | 0.6h | 需求跟踪记录 |
| 205 | 1.4.5.1.4 | 导出需求相关数据 | manual | 1d | 2019-01-10 19:00 A | 2019-01-11 20:00 A | 204 | 100% |  |  |  |  | 陈铭阳 | 5h | 5h | 需求相关数据 |
| 206 | 1.4.5.2 | **需求变更管理** |  | 2.6d | 2019-01-07 19:00 A | 2019-01-12 20:00 | 240 | 99% | 0d |  |  | 0d |  | 25h | 25h |  |
| 207 | 1.4.5.2.1 | 建立变更控制委员会 | manual | 0.2d | 2019-01-08 19:00 A | 2019-01-08 20:00 | 240 | 99% | 0d |  |  |  | 赵佳锋; 蓝舒雯; 刘祺; 陈铭阳; 赵唯皓 | 1h | 1h | 变更控制委员会成员信息 |
| 208 | 1.4.5.2.2 | 编写CCB章程 | manual | 0.6d | 2019-01-07 19:00 A | 2019-01-10 19:00 A | 207 | 100% |  |  |  |  | 赵佳锋; 赵唯皓 | 4h | 4h | CCB章程 |
| 209 | 1.4.5.2.3 | 递交变更申请书 | manual | 1d | 2019-01-08 19:00 A | 2019-01-10 21:00 A | 208 | 100% |  |  |  |  | 刘祺 | 5h | 5h | 需求变更申请书 |
| 210 | 1.4.5.2.4 | CCB会议 | manual | 1d | 2019-01-09 19:00 A | 2019-01-10 22:00 A | 209, 205, 201 | 100% |  |  |  |  |  |  |  | CCB会议记录 |
| 211 | 1.4.5.2.5 | 需求变更文档编写 | manual | 1d | 2019-01-10 19:00 A | 2019-01-11 20:00 A | 210 | 100% |  |  |  |  | 刘祺 | 5h | 5h | 需求变更文档 |
| 212 | 1.4.5.2.6 | 变更任务安排 | manual | 1d | 2019-01-11 19:00 A | 2019-01-12 20:00 A | 211 | 100% |  |  |  |  | 刘祺 | 5h | 5h | 任务安排 |
| 213 | 1.4.5.2.7 | 需求变更管理阶段组内评审 | manual | 0.2d | 2019-01-12 19:00 A | 2019-01-12 20:00 A | 212 | 100% |  |  |  |  | 陈铭阳; 蓝舒雯; 刘祺; 赵佳锋; 赵唯皓 | 5h | 5h | 内部评审记录 |

| ID | WBS | Task | Type | Duration | Start | Finish | Predecessors | Complete | Actual start | Actual finish | Constraint | Resources | Work | Actual work | 最终交付物 |
| --- | --- | --- | --- | --- | --- | --- | --- | --- | --- | --- | --- | --- | --- | --- | --- |
| 214 | 1.5 | **项目控制** |  | 27.7d | 2018-10-12 19:00 | 2019-01-12 20:00 |  | 100% | 2018-09-27 19:00 | 2019-01-12 20:30 |  |  | 134h | 134h |  |
| 215 | 1.5.1 | **团建** |  | 14.5d | 2018-10-12 19:00 A | 2018-12-16 20:00 A |  | 100% |  |  |  |  | 10h | 10h |  |
| 216 | 1.5.1.1 | 第一次团建 | manual | 0.2d | 2018-10-12 19:00 A | 2018-10-12 20:00 A | 3 | 100% |  |  |  | 赵佳锋; 蓝舒雯; 刘祺; 陈铭阳; 赵唯皓 | 5h | 5h | 团建记录 |
| 217 | 1.5.1.2 | 第二次团建 | manual | 0.2d | 2018-12-16 19:00 A | 2018-12-16 20:00 A | 216 | 100% |  |  |  | 陈铭阳; 蓝舒雯; 刘祺; 赵佳锋; 赵唯皓 | 5h | 5h |  |
| 218 | 1.5.2 | **小组例会** |  | 24.2d | 2018-09-27 19:00 A | 2019-01-04 20:00 |  | 100% |  | 2019-01-10 20:00 |  |  | 63h | 63h |  |
| 219 | 1.5.2.1 | G12-第1次例会（常规） | manual | 0.2d | 2018-09-27 19:00 A | 2018-10-07 19:30 A |  | 100% |  |  |  | 赵佳锋; 蓝舒雯; 刘祺; 陈铭阳; 赵唯皓 | 2.5h | 2.5h | 《会议纪要》 |
| 220 | 1.5.2.2 | G12-第2次例会（常规） | manual | 0.1d | 2018-10-11 19:00 A | 2018-10-12 19:30 A | 219 | 100% |  |  |  | 赵佳锋; 蓝舒雯; 刘祺; 陈铭阳; 赵唯皓 | 2.5h | 2.5h | 《会议纪要》 |
| 221 | 1.5.2.3 | G12-第3次例会（常规） | manual | 0.1d | 2018-10-18 19:00 A | 2018-10-18 19:30 A | 220 | 100% |  |  |  | 赵佳锋; 蓝舒雯; 刘祺; 陈铭阳; 赵唯皓 | 2.5h | 2.5h | 《会议纪要》 |
| 222 | 1.5.2.4 | G12-第4次例会（常规） | manual | 0.1d | 2018-10-25 19:00 A | 2018-10-25 19:30 A | 221 | 100% |  |  |  | 赵佳锋; 蓝舒雯; 刘祺; 陈铭阳; 赵唯皓 | 2.5h | 2.5h | 《会议纪要》 |
| 223 | 1.5.2.5 | G12-第5次例会（常规） | manual | 0.1d | 2018-11-01 19:00 A | 2018-11-01 19:30 A | 222 | 100% |  |  |  | 赵佳锋; 蓝舒雯; 刘祺; 陈铭阳; 赵唯皓 | 2.5h | 2.5h | 《会议纪要》 |
| 224 | 1.5.2.6 | G12-第6次例会（常规） | manual | 0.1d | 2018-11-08 19:00 A | 2018-11-15 19:30 A | 223 | 100% |  |  | start no earlier than 2018-11-08 19:00 | 赵佳锋; 蓝舒雯; 刘祺; 陈铭阳; 赵唯皓 | 2.5h | 2.5h | 《会议纪要》 |
| 225 | 1.5.2.7 | G12-第7次例会（常规） | manual | 0.1d | 2018-11-15 19:00 A | 2018-11-15 20:00 A | 224 | 100% |  |  |  | 赵佳锋; 蓝舒雯; 刘祺; 陈铭阳; 赵唯皓 | 2.5h | 2.5h | 《会议纪要》 |
| 226 | 1.5.2.8 | G12-第8次例会（临时） | manual | 0.2d | 2018-11-19 13:00 A | 2018-11-19 14:00 A | 225 | 100% |  |  |  | 赵佳锋; 蓝舒雯; 刘祺; 陈铭阳; 赵唯皓 | 5h | 5h | 《会议纪要》 |
| 227 | 1.5.2.9 | G12-第9次例会（常规） | manual | 0.1d | 2018-11-22 19:00 A | 2018-11-22 19:30 A | 226 | 100% |  |  |  | 赵佳锋; 蓝舒雯; 刘祺; 陈铭阳; 赵唯皓 | 2.5h | 2.5h | 《会议纪要》 |
| 228 | 1.5.2.10 | G12-第10次例会（常规） | manual | 0.1d | 2018-11-29 19:00 A | 2018-11-29 19:30 A | 227 | 100% |  |  |  | 赵佳锋; 蓝舒雯; 刘祺; 陈铭阳; 赵唯皓 | 2.5h | 2.5h | 《会议纪要》 |
| 229 | 1.5.2.11 | G12-第11次例会（临时） | manual | 0.4d | 2018-12-01 10:00 A | 2018-12-01 20:00 A | 228 | 100% |  |  |  | 赵佳锋; 蓝舒雯; 刘祺; 陈铭阳; 赵唯皓 | 10h | 10h | 访谈问题，《会议纪要》 |
| 230 | 1.5.2.12 | G12-第12次例会（常规） | manual | 0.1d | 2018-12-06 19:00 A | 2018-12-06 19:30 A | 229 | 100% |  |  |  | 赵佳锋; 蓝舒雯; 刘祺; 陈铭阳; 赵唯皓 | 2.5h | 2.5h | 《会议纪要》 |
| 231 | 1.5.2.13 | G12-第13次例会（常规） | manual | 0.2d | 2018-12-13 19:00 A | 2018-12-13 20:00 A | 230 | 100% |  |  |  | 赵佳锋; 蓝舒雯; 刘祺; 陈铭阳; 赵唯皓 | 5h | 5h | 《会议纪要》 |
| 232 | 1.5.2.14 | G12-第14次例会（常规） | manual | 0.2d | 2018-12-20 19:00 A | 2018-12-20 20:00 A | 231 | 100% |  |  |  | 赵佳锋; 蓝舒雯; 刘祺; 陈铭阳; 赵唯皓 | 3h | 3h | 《会议纪要》 |
| 233 | 1.5.2.15 | G12-第15次例会（常规） | manual | 0.2d | 2018-12-27 19:00 A | 2018-12-27 20:00 A | 232 | 100% |  |  |  | 赵佳锋; 蓝舒雯; 刘祺; 陈铭阳; 赵唯皓 | 5h | 5h | 《会议纪要》 |
| 234 | 1.5.2.16 | G12-第16次例会（常规） | manual | 0.2d | 2019-01-03 19:00 A | 2019-01-03 20:00 A | 233 | 100% |  |  |  | 陈铭阳; 蓝舒雯; 刘祺; 赵佳锋; 赵唯皓 | 5h | 5h |  |
| 235 | 1.5.2.17 | G12-第17次例会（常规） | manual | 0.2d | 2019-01-10 19:00 A | 2019-01-10 20:00 A | 234 | 100% |  |  |  | 陈铭阳; 蓝舒雯; 刘祺; 赵佳锋; 赵唯皓 | 5h | 5h |  |
| 236 | 1.5.3 | **过程评审** |  | 21.7d | 2018-11-11 11:00 | 2019-01-11 20:00 A |  | 100% | 2018-11-29 15:00 |  |  |  | 31h | 31h |  |
| 237 | 1.5.3.1 | **需求工程项目计划评审** |  | 11.9d | 2018-11-11 11:00 | 2018-12-13 11:00 |  | 100% | 2018-11-29 15:00 | 2018-12-12 11:00 |  |  | 16h | 16h |  |
| 238 | 1.5.3.1.1 | 需求计划评审第一次 | manual | 0.3d | 2018-11-29 15:00 A | 2018-11-29 16:30 A | 55, 72, 78 | 100% |  |  |  | 赵佳锋; 蓝舒雯; 陈铭阳; 赵唯皓 | 6h | 6h | 评审结果及修改文档 |
| 239 | 1.5.3.1.2 | 需求计划评审（重评） | milestone, manual | 0.4d | 2018-12-12 09:00 A | 2018-12-12 11:00 A | 238, 73, 79, 230, 57 | 100% |  |  |  | 赵佳锋; 蓝舒雯; 刘祺; 陈铭阳; 赵唯皓 | 10h | 10h | 评审结果及修改文档 |
| 240 | 1.5.3.2 | 需求规格说明文档评审 | milestone, manual | 0.4d | 2019-01-02 21:30 A | 2019-01-03 19:30 A | 182, 194, 188, 199, 237 | 100% |  |  | start no earlier than 2019-01-06 18:00 | 赵佳锋; 蓝舒雯; 刘祺; 陈铭阳; 赵唯皓 | 10h | 10h | 《评审结果及修改内容要求 |
| 241 | 1.5.3.3 | 需求变更控制文档评审 | milestone, manual | 0.2d | 2019-01-11 19:00 A | 2019-01-11 20:00 A | 213, 175, 206 | 100% |  |  |  | 赵佳锋; 蓝舒雯; 刘祺; 陈铭阳; 赵唯皓 | 5h | 5h | 《评审结果及修改内容要求 |

| ID | WBS | Task | Type | Duration | Start | Finish | Predecessors | Complete | Remaining | Actual start | Resources | Work | Actual work | 最终交付物 |
| --- | --- | --- | --- | --- | --- | --- | --- | --- | --- | --- | --- | --- | --- | --- |
| 242 | 1.5.4 | **计划** |  | 6.4d | 2019-01-03 19:30 A | 2019-01-12 20:30 A |  | 100% |  |  |  | 30h | 30h |  |
| 243 | 1.5.4.1 | 系统设计与实现计划 | manual | 2d | 2019-01-03 19:30 A | 2019-01-05 23:00 A | 240 | 100% |  |  | 赵佳锋; 赵唯皓 | 5h | 5h | 系统设计与实现计划 |
| 244 | 1.5.4.2 | 软件概要设计 | milestone, manual | 1d | 2019-01-06 19:00 A | 2019-01-09 20:00 A | 243 | 100% |  |  | 赵佳锋 | 5h | 5h | 软件概要设计 |
| 245 | 1.5.4.3 | 部署计划 | manual | 1d | 2019-01-11 10:00 A | 2019-01-11 15:00 A | 244 | 100% |  |  | 赵唯皓 | 5h | 5h | 部署计划 |
| 246 | 1.5.4.4 | 测试计划 | manual | 1d | 2019-01-11 10:00 A | 2019-01-11 15:00 A | 244 | 100% |  |  | 蓝舒雯 | 5h | 5h | 测试计划 |
| 247 | 1.5.4.5 | 维护计划 | manual | 1d | 2019-01-11 19:30 A | 2019-01-12 20:30 A | 244 | 100% |  |  | 陈铭阳 | 5h | 5h | 维护计划 |
| 248 | 1.5.4.6 | 培训计划 | manual | 1d | 2019-01-11 09:30 A | 2019-01-11 14:30 A | 244 | 100% |  |  | 刘祺 | 5h | 5h | 培训计划 |
| 249 | 1.6 | **项目收尾** |  | 3.6d | 2019-01-12 19:00 | 2019-01-19 20:00 |  | 71% | 1.03d | 2019-01-12 18:00 |  | 58.86h | 52h |  |
| 250 | 1.6.1 | 整合已完成文档 | manual | 0.6d | 2019-01-12 18:00 A | 2019-01-12 21:00 A | 240, 241, 239, 74, 57, 80, 245, 246, 247, 248, 174, 89, 95, 122, 125 | 100% |  |  | 赵佳锋; 蓝舒雯; 刘祺; 陈铭阳; 赵唯皓 | 27h | 27h | 整合文档集合 |
| 251 | 1.6.2 | 项目总结报告 | manual | 0.8d | 2019-01-13 13:00 A | 2019-01-13 17:00 A | 250 | 100% |  |  | 陈铭阳 | 5h | 5h | 《项目总结报告》 |
| 252 | 1.6.3 | 文档改进和ppt完善 | manual | 0.6d | 2019-01-14 19:00 A | 2019-01-15 20:00 A |  | 100% |  |  | 陈铭阳; 蓝舒雯; 刘祺; 赵佳锋; 赵唯皓 | 20h | 20h | 改进的文档 |
| 253 | 1.6.4 | 最终评审 | milestone, manual | 0.2d | 2019-01-16 11:00 A | 2019-01-16 12:00 | 251 |  | 0.2d |  | 赵佳锋; 蓝舒雯; 刘祺; 陈铭阳; 赵唯皓 | 5h |  | 评审结果 |
| 254 | 1.6.5 | 按评审要求修改需提交的文档并提交 | manual | 0.4d | 2019-01-17 18:00 A | 2019-01-17 20:00 | 253 |  | 0.4d |  | 陈铭阳; 蓝舒雯; 刘祺; 赵佳锋; 赵唯皓 | 0.86h |  | 整理的需提交的最终所有文档 |
| 255 | 1.6.6 | 散伙饭 | manual | 0.2d | 2019-01-19 19:00 A | 2019-01-19 20:00 | 254 |  | 0.2d |  | 赵佳锋; 蓝舒雯; 刘祺; 陈铭阳; 赵唯皓 | 1h |  |  |
