# PRD2018-G12-甘特图11

Schedule from MS Project, 2018-09-19 to 2019-01-16, status date 2018-10-30, 5 hours a day, A marks actual dates.
HP

## Calendars

- 需求项目日历: Mon-Sat 19:00-20:00; Sun off. Exceptions (off unless hours are given): 2018-10-01 to 2018-10-06 (国庆假期), 2018-10-07 18:00-19:30 (第一次团建), 2018-11-19 13:00-14:00, 19:00-20:00 (第一次访谈前的准备), 2018-11-25 09:30-10:30 (访谈1), 2018-11-29 15:00-16:30, 19:00-20:00, 21:00-23:59 (需求计划评审1), 2018-12-01 10:00-12:00, 19:00-20:00 (第2次访谈前准备), 2018-12-02 19:00-20:00 (发送邀请函), 2018-12-03 19:00-20:00 (c), 2018-12-04 17:00-18:00, 19:00-20:00 (访谈2), 2018-12-16 08:00-12:00 (应用程序开发会议), 2018-12-17 17:00-21:00 (需求重用加班), 2018-12-23 09:00-12:00 (建立变更控制委员会), 2018-12-31 17:00-21:00 (审查规格说明加班), 2019-01-01 17:00-23:00 (测试用例加班), 2019-01-02 17:00-23:00 (修订用例加班), 2019-01-03 19:00-21:00 (建立变更控制委员会), 2019-01-04 16:00-23:00 (加班编写文档), 2019-01-05 16:00-23:00 (加班编写文档2), 2019-01-06 18:00-20:00 (延迟小组会议), 2019-01-07 18:00-20:00 (最后一次会议), 2019-01-10 18:00-22:00 (加班整合文档), 2019-01-11 18:00-22:00 (加班编写项目总结), 2019-01-12 18:00-21:00 (加班制作评审ppt), 2019-01-15 18:00-21:00 (散伙饭).

## Resources

| Resource |
| --- |
| 蓝舒雯 |
| 刘祺 |
| 赵佳锋 |
| 陈铭阳 |
| 赵唯皓 |

## Schedule

| ID | WBS | Task | Type | Duration | Start | Finish | Predecessors | Complete | Remaining | Actual start | Actual finish | Resources | Work | Actual work | 最终交付物 |
| --- | --- | --- | --- | --- | --- | --- | --- | --- | --- | --- | --- | --- | --- | --- | --- |
| 1 | * | **软件工程系列课程教学辅助网站-需求工程项目** |  | 37d | 2018-09-19 08:00 | 2019-01-16 17:00 |  | 45% | 20.5d | 2018-09-19 19:00 |  |  | 483.82h | 163.82h |  |
| 2 | *.1 | **项目启动** |  | 1d | 2018-09-19 19:00 A | 2018-09-23 20:00 |  | 88% | 0.12d |  |  |  | 11h | 10h |  |
| 3 | *.1.1 | 确定小组人员并成立G12小组 | manual | 0.4d | 2018-09-19 19:00 A | 2018-09-20 20:00 A |  | 100% |  |  |  | 赵佳锋; 蓝舒雯; 刘祺; 陈铭阳; 赵唯皓 | 5h | 5h | 《G12小组成员信息》 |
| 4 | *.1.4 | 项目任务书下达 | manual | 0.2d | 2018-09-20 19:00 A | 2018-09-20 20:00 A | 3 | 100% |  |  |  |  | 1h | 1h | 《项目任务书》 |
| 5 | 1.1.3 | 安装配置管理工具初步 | manual | 0.6d | 2018-09-21 19:00 A | 2018-09-24 20:00 | 4 | 67% | 0.2d |  |  | 赵佳锋; 陈铭阳 | 3h | 2h | 《配置结果》 |
| 6 | 1.1.4 | logo设计 | manual | 0.4d | 2018-09-21 19:00 A | 2018-09-22 20:00 A | 4 | 100% |  |  |  | 蓝舒雯 | 2h | 2h | logo |
| 7 | 1.2 | **知识储备** |  | 18.9d | 2018-10-08 19:00 A | 2018-12-23 20:00 |  | 60% | 7.61d |  |  |  | 33.84h | 32.84h |  |
| 8 | 1.2.1 | **UML概述** |  | 1.4d | 2018-10-08 19:00 A | 2018-10-14 20:00 |  | 100% |  |  | 2018-10-13 20:00 |  | 7.86h | 7.86h | 翻转1ppt |
| 9 | 1.2.1.1 | PPT1-4部分 | manual | 0.2d | 2018-10-08 19:00 A | 2018-10-10 20:00 A |  | 100% |  |  |  | 赵佳锋 | 1h | 1h | 《部分ppt资料》 |
| 10 | 1.2.1.2 | PPT 第5部分 | manual | 0.6d | 2018-10-08 19:00 A | 2018-10-10 20:00 A |  | 100% |  |  |  | 蓝舒雯 | 0.38h | 0.38h | 《部分ppt资料》 |
| 11 | 1.2.1.3 | PPT 第6部分 | manual | 0.6d | 2018-10-08 19:00 A | 2018-10-10 20:00 A |  | 100% |  |  |  | 赵唯皓 | 0.48h | 0.48h | 《部分ppt资料》 |
| 12 | 1.2.1.4 | PPT 第7部分 | manual | 0.4d | 2018-10-08 19:00 A | 2018-10-09 20:00 A |  | 100% |  |  |  | 陈铭阳 | 2h | 2h | 《部分ppt资料》 |
| 13 | 1.2.1.5 | PPT第8部分 | manual | 0.4d | 2018-10-09 19:00 A | 2018-10-10 20:00 A |  | 100% |  |  |  | 刘祺 | 2h | 2h | 《部分ppt资料》 |
| 14 | 1.2.1.6 | 整合制成PPt | manual | 0.2d | 2018-10-12 19:00 A | 2018-10-12 20:00 A | 9, 10, 11, 12, 13 | 100% |  |  |  | 陈铭阳 | 1h | 1h | 完整ppt |
| 15 | 1.2.1.7 | 审核检查 | manual | 0.2d | 2018-10-13 19:00 A | 2018-10-13 20:00 A | 14 | 100% |  |  |  | 刘祺 | 1h | 1h | 翻转ppt |
| 16 | 1.2.2 | **UML工具** |  | 1.4d | 2018-10-15 19:00 A | 2018-10-21 20:00 | 8 | 88% | 0.17d |  |  |  | 4.28h | 3.28h | 翻转2ppt |
| 17 | 1.2.2.1 | PPT 第1部分资料收集 | manual | 0.4d | 2018-10-15 19:00 A | 2018-10-16 20:00 A |  | 100% |  |  |  | 蓝舒雯 | 0.14h | 0.14h | 《部分ppt资料》 |
| 18 | 1.2.2.2 | PPT 2-5部分资料收集 | manual | 0.2d | 2018-10-15 19:00 A | 2018-10-17 20:00 | 17FF, 20FF, 21FF, 22FF |  | 0.2d |  |  | 赵佳锋 | 1h |  | 《部分ppt资料》 |
| 19 | 1.2.2.3 | PPT资料整合及审核 | manual | 0.2d | 2018-10-20 19:00 A | 2018-10-20 20:00 A | 18, 17, 20, 21, 22 | 100% |  |  |  | 陈铭阳 | 1h | 1h | 翻转ppt |
| 20 | 1.2.2.4 | PPT 第6部分资料收集 | manual | 0.2d | 2018-10-15 19:00 A | 2018-10-17 20:00 A |  | 100% |  |  |  | 陈铭阳 | 1h | 1h | 《部分ppt资料》 |
| 21 | 1.2.2.5 | PPT 第7部分资料收集 | manual | 0.2d | 2018-10-15 19:00 A | 2018-10-15 20:00 A |  | 100% |  |  |  | 刘祺 | 1h | 1h | 《部分ppt资料》 |
| 22 | 1.2.2.6 | PPT 第8部分资料收集 | manual | 0.4d | 2018-10-15 19:00 A | 2018-10-16 20:00 A |  | 100% |  |  |  | 赵唯皓 | 0.14h | 0.14h | 《部分ppt资料》 |
| 23 | 1.2.3 | **UML基础1** |  | 1.4d | 2018-10-22 19:00 A | 2018-10-28 20:00 | 16 | 100% |  |  | 2018-10-26 20:00 |  | 3.71h | 3.71h | 翻转3ppt |
| 24 | 1.2.3.1 | PPT 第2部分 | manual | 0.1d | 2018-10-22 19:00 A | 2018-10-22 20:00 A |  | 100% |  |  |  | 刘祺 | 0.5h | 0.5h | 《部分ppt资料》 |
| 25 | 1.2.3.2 | PPT 第3部分 | manual | 0.2d | 2018-10-22 19:00 A | 2018-10-22 20:00 A |  | 100% |  |  |  | 蓝舒雯 | 0.07h | 0.07h | 《部分ppt资料》 |
| 26 | 1.2.3.3 | PPT 第4部分 | manual | 0.2d | 2018-10-22 19:00 A | 2018-10-22 20:00 A |  | 100% |  |  |  | 陈铭阳 | 1h | 1h | 《部分ppt资料》 |
| 27 | 1.2.3.4 | PPT 第7部分 | manual | 0.4d | 2018-10-22 19:00 A | 2018-10-23 20:00 A |  | 100% |  |  |  | 赵唯皓 | 0.14h | 0.14h | 《部分ppt资料》 |
| 28 | 1.2.3.5 | PPT 1、5、6、8、9部分 | manual | 0.2d | 2018-10-23 19:00 A | 2018-10-23 20:00 A |  | 100% |  |  |  | 赵佳锋 | 1h | 1h | ppt初步 |
| 29 | 1.2.3.6 | PPT整合及审核 | manual | 0.2d | 2018-10-26 19:00 A | 2018-10-26 20:00 A | 28, 24, 25, 26, 27 | 100% |  |  |  | 陈铭阳 | 1h | 1h |  |

| ID | WBS | Task | Type | Duration | Start | Finish | Predecessors | Complete | Actual start | Actual finish | Constraint | Resources | Work | Actual work | 最终交付物 |
| --- | --- | --- | --- | --- | --- | --- | --- | --- | --- | --- | --- | --- | --- | --- | --- |
| 30 | 1.2.4 | **UML基础2** |  | 1.4d | 2018-10-29 19:00 A | 2018-11-04 20:00 | 23 | 100% |  | 2018-11-03 20:00 |  |  | 11h | 11h |  |
| 31 | 1.2.4.1 | 修改翻转pptUML基础1 | milestone, manual | 0d | 2018-10-29 19:00 A | 2018-10-29 20:00 A | 28 | 100% |  |  |  | 刘祺 |  |  |  |
| 32 | 1.2.4.2 | 「原型的定义和动机」部分 | manual | 0.2d | 2018-10-30 19:00 A | 2018-10-30 20:00 A | 31 | 100% |  |  |  | 刘祺 | 1h | 1h | 「原型的定义和动机」部分PPT资料 |
| 33 | 1.2.4.3 | 「原型成功的因素」和「原型界面介绍」部分PPt资料 | manual | 0.4d | 2018-10-30 19:00 A | 2018-10-31 20:00 A | 31 | 100% |  |  |  | 蓝舒雯 | 2h | 2h | 「原型成功的因素」和「原型界面介绍」部分 |
| 34 | 1.2.4.4 | 「原型风险」部分 | manual | 0.4d | 2018-10-30 19:00 A | 2018-10-31 20:00 A | 31 | 100% |  |  |  | 赵唯皓 | 2h | 2h | 「原型风险」部分PPT资料 |
| 35 | 1.2.4.5 | 「原型的使用和评估」部分 | manual | 0.4d | 2018-10-30 19:00 A | 2018-10-31 20:00 A | 31 | 100% |  |  |  | 陈铭阳 | 2h | 2h | 「原型的使用和评估」部分PPt资料 |
| 36 | 1.2.4.6 | 「原型的未来用途和形式」和「Axure RP的界面和使用」部分 | manual | 0.4d | 2018-10-30 19:00 A | 2018-10-31 20:00 A | 31 | 100% |  |  |  | 赵佳锋 | 2h | 2h | 「原型的未来用途和形式」和「Axure RP的界面和使用」部分PPt资料 |
| 37 | 1.2.4.7 | PPT整合 | manual | 0.2d | 2018-11-02 19:00 A | 2018-11-02 20:00 A | 32, 33, 34, 35, 36 | 100% |  |  |  | 陈铭阳 | 1h | 1h | 第四次翻转ppt-UML学习基础2起草 |
| 38 | 1.2.4.8 | PPt小组内审核及修改 | manual | 0.2d | 2018-11-03 19:00 A | 2018-11-03 20:00 A | 37 | 100% |  |  |  | 刘祺 | 1h | 1h | 第四次翻转ppt-UML学习基础2审核版 |
| 39 | 1.2.5 | **UML基础3** |  | 4d | 2018-12-07 08:00 | 2018-12-08 08:00 | 30 | 100% | 2018-12-03 19:00 | 2018-12-05 20:00 |  |  | 7h | 7h |  |
| 40 | 1.2.5.1 | 搜集第一部分和第三部分资料 | manual | 0.4d | 2018-12-03 19:00 A | 2018-12-04 18:00 A |  | 100% |  |  |  | 赵唯皓 | 2h | 2h | 《部分ppt资料》 |
| 41 | 1.2.5.2 | 搜集第二部分资料 | manual | 0.4d | 2018-12-03 19:00 A | 2018-12-04 18:00 A |  | 100% |  |  |  | 赵佳锋 | 2h | 2h | 《部分ppt资料》 |
| 42 | 1.2.5.3 | PPT第一部分及汇总和审核 | manual | 0.2d | 2018-12-05 19:00 A | 2018-12-05 20:00 A | 40FF, 41FF, 43FF, 44FF | 100% |  |  | start no earlier than 2018-12-05 19:00 | 陈铭阳 | 1h | 1h | 完整翻转ppt |
| 43 | 1.2.5.4 | PPT第二部分 | manual | 0.2d | 2018-12-05 19:00 A | 2018-12-05 20:00 A |  | 100% |  |  | start no earlier than 2018-12-05 19:00 | 刘祺 | 1h | 1h | 部分ppt |
| 44 | 1.2.5.5 | PPT第三部分 | manual | 0.2d | 2018-12-05 19:00 A | 2018-12-05 20:00 A |  | 100% |  |  |  | 蓝舒雯 | 1h | 1h | 部分ppt |
| 45 | 1.2.6 | **UML基础4** |  | 5.2d | 2018-12-10 08:00 | 2018-12-16 17:00 | 39 |  |  |  |  |  |  |  |  |
| 46 | 1.2.6.1 | 制作ppt | manual | 5.8d | 2018-12-10 08:00 | 2018-12-21 20:00 |  |  |  |  |  |  |  |  | 翻转6ppt |
| 47 | 1.3 | **项目计划** |  | 5.3d | 2018-09-24 19:00 A | 2018-10-28 20:00 | 2 | 100% |  | 2018-12-02 20:00 |  |  | 30.98h | 30.98h |  |
| 48 | 1.3.1 | **《可行性分析报告》编写和修订** |  | 1.4d | 2018-09-24 19:00 A | 2018-09-30 20:00 |  | 100% |  | 2018-12-02 20:00 |  |  | 7h | 7h |  |
| 49 | 1.3.1.1 | 寻找《可行性分析报告》模板 | manual | 0.2d | 2018-09-24 19:00 A | 2018-09-24 20:00 A | 5 | 100% |  |  |  | 刘祺 | 1h | 1h | 《可行性分析报告》模板 |
| 50 | 1.3.1.2 | 编写《可行性分析报告1》 | manual | 0.4d | 2018-09-25 19:00 A | 2018-09-26 20:00 A | 49 | 100% |  |  |  | 赵唯皓 | 2h | 2h | 《可行性分析报告》部分 |
| 51 | 1.3.1.3 | 编写《可行性分析报告2》 | manual | 0.4d | 2018-09-28 19:00 A | 2018-09-29 20:00 A | 50 | 100% |  |  |  | 陈铭阳 | 2h | 2h | 《可行性分析报告》初稿 |
| 52 | 1.3.1.4 | 《可行性分析报告》修订1 | manual | 0.2d | 2018-11-30 19:00 A | 2018-11-30 20:00 A | 51 | 100% |  |  |  | 赵唯皓 | 1h | 1h | 《可行性分析报告》修订1 |
| 53 | 1.3.1.5 | 《可行性分析报告》修订2 | manual | 0.2d | 2018-12-02 19:00 A | 2018-12-02 20:00 A | 52 | 100% |  |  |  | 赵唯皓 | 1h | 1h | 《可行性分析报告》修订2 |

| ID | WBS | Task | Type | Duration | Start | Finish | Predecessors | Complete | Remaining | Actual start | Actual finish | Constraint | Resources | Work | Actual work | 最终交付物 |
| --- | --- | --- | --- | --- | --- | --- | --- | --- | --- | --- | --- | --- | --- | --- | --- | --- |
| 54 | 1.3.2 | **《需求工程项目计划》的编写和修订** |  | 12.4d | 2018-09-24 19:00 A | 2018-12-01 11:00 |  | 100% |  |  | 2018-11-29 23:59 |  |  | 19.98h | 19.98h |  |
| 55 | 1.3.2.1 | 找寻《项目计划》模板 | manual | 0.2d | 2018-09-24 19:00 A | 2018-09-24 20:00 A |  | 100% |  |  |  |  | 陈铭阳 | 1h | 1h | 《项目计划》模板 |
| 56 | 1.3.2.2 | WBS、OBS的绘制 | manual | 0.6d | 2018-09-24 19:00 A | 2018-09-27 20:00 A | 55 | 100% |  |  |  | start no earlier than 2018-09-24 19:00 | 蓝舒雯 | 3h | 3h | WBS、OBS |
| 57 | 1.3.2.3 | 制定《需求工程项目计划》第一部分 | manual | 0.4d | 2018-09-25 19:00 A | 2018-09-26 20:00 A | 55, 6 | 100% |  |  |  |  | 赵佳锋 | 2h | 2h | 《需求工程项目计划》初稿 |
| 58 | *.1.8 | 制定《需求工程项目计划》第二部分 | manual | 0.38d | 2018-09-28 19:30 A | 2018-10-07 18:30 A | 55 | 100% |  |  |  |  | 赵佳锋 | 1h | 1h | 《需求工程项目计划》初稿 |
| 59 | *.1.9 | 修订《需求工程项目计划》 | manual | 0.2d | 2018-09-29 19:00 A | 2018-09-29 20:00 A | 57, 58 | 100% |  |  |  |  | 陈铭阳 | 1h | 1h | 《需求工程项目计划》终稿 |
| 60 | 1.3.2.6 | 第一次修订需求工程计划 | manual | 0.2d | 2018-11-02 19:00 A | 2018-11-02 20:00 A | 59 | 100% |  |  |  |  | 赵唯皓 | 1h | 1h | 修订记录 |
| 61 | 1.3.2.7 | 审核第一次修订后的需求工程计划 | manual | 0.2d | 2018-11-03 19:00 A | 2018-11-03 20:00 A | 60 | 100% |  |  |  |  | 陈铭阳 | 1h | 1h | 《需求工程计划》修订V1 |
| 62 | 1.3.2.8 | 第二次修订需求工程计划 | manual | 0.2d | 2018-11-09 19:00 A | 2018-11-12 20:00 A | 61 | 100% |  |  |  |  | 陈铭阳 | 1h | 1h | 修订记录 |
| 63 | 1.3.2.9 | 审核第二次修订后的需求工程计划 | manual | 0.2d | 2018-11-10 19:00 A | 2018-11-12 20:00 A | 62 | 100% |  |  |  |  | 赵唯皓 | 1h | 1h | 《需求工程计划》修订V2 |
| 64 | 1.3.2.10 | 第三次修订需求工程计划 | manual | 0.2d | 2018-11-16 19:00 A | 2018-11-16 20:00 A | 63 | 100% |  |  |  |  | 赵唯皓 | 1h | 1h | 修订记录 |
| 65 | 1.3.2.11 | 审核第三次修订后的需求工程计划 | manual | 0.2d | 2018-11-17 19:00 A | 2018-11-17 20:00 A | 64 | 100% |  |  |  |  | 陈铭阳 | 1h | 1h | 《需求工程计划》修订V3 |
| 66 | 1.3.2.12 | 修订WBS | manual | 0.2d | 2018-11-16 19:00 A | 2018-11-16 20:00 A | 56 | 100% |  |  |  |  | 蓝舒雯 | 1h | 1h | WBS |
| 67 | 1.3.2.13 | 修订OBS | manual | 0.2d | 2018-11-17 19:00 A | 2018-11-17 20:00 A | 56 | 100% |  |  |  |  | 蓝舒雯 | 1h | 1h | OBS |
| 68 | 1.3.2.14 | 第四次修改需求工程计划 | manual | 0.2d | 2018-11-24 19:00 A | 2018-11-24 20:00 A | 65, 66, 67 | 100% |  |  |  |  | 刘祺 | 1h | 1h | 《需求工程计划》修订V4 |
| 69 | 1.3.2.15 | 第五次需求工程计划修订 | manual | 0.6d | 2018-11-29 21:00 A | 2018-11-29 23:59 A | 68 | 100% |  |  |  |  | 刘祺 | 2.98h | 2.98h | 《需求工程计划》修订V5 |
| 70 | 1.3.3 | **《项目章程》编写和审查** |  | 9.7d | 2018-10-15 19:00 | 2018-12-01 11:00 |  | 100% |  | 2018-10-16 19:00 | 2018-11-30 20:00 |  |  | 4h | 4h |  |
| 71 | 1.3.3.1 | 《项目章程模板》寻找 | manual | 0.2d | 2018-10-16 19:00 A | 2018-10-16 20:00 A |  | 100% |  |  |  |  | 刘祺 | 1h | 1h | 《项目章程》模板 |
| 72 | 1.3.3.2 | 制定《项目章程》 | manual | 0.2d | 2018-10-16 19:00 A | 2018-10-16 20:00 A | 71 | 100% |  |  |  |  | 赵佳锋 | 1h | 1h | 《项目章程》初稿 |
| 73 | 1.3.3.3 | 《项目章程》审核修订1 | manual | 0.2d | 2018-10-20 19:00 A | 2018-10-20 20:00 A | 72 | 100% |  |  |  |  | 赵唯皓 | 1h | 1h | 《项目章程》V1 |
| 74 | 1.3.3.4 | 《项目章程》修订2 | manual | 0.2d | 2018-11-30 19:00 A | 2018-11-30 20:00 A | 73 | 100% |  |  |  |  | 赵佳锋 | 1h | 1h | 《项目章程》V2 |
| 75 | *.3 | **项目执行** |  | 6.9d | 2018-11-05 19:00 A | 2018-12-03 20:00 | 47 | 24% | 5.27d |  |  |  |  | 274.33h | 39h |  |
| 76 | 1.4.1 | **需求获取** |  | 14.3d | 2018-11-05 19:00 A | 2018-12-31 20:00 |  | 53% | 6.77d |  |  |  |  | 86h | 37h |  |
| 77 | *.3.3 | **定义及编写项目视图与范围** |  | 1d | 2018-11-05 19:00 A | 2018-11-09 20:00 |  | 90% | 0.1d |  |  |  |  | 10h | 9h |  |
| 78 | 1.4.1.1.1 | 寻找愿景和范围文档模板 | manual | 0.2d | 2018-11-05 19:00 A | 2018-11-05 20:00 A |  | 100% |  |  |  |  | 蓝舒雯 | 1h | 1h | 《愿景与范围文档》模板 |
| 79 | 1.4.1.1.2 | 愿景和范围文档第一部分 | manual | 0.2d | 2018-11-06 19:00 A | 2018-11-06 20:00 A | 78 | 100% |  |  |  |  | 刘祺 | 1h | 1h | 《愿景与范围文档》第一部分 |
| 80 | 1.4.1.1.3 | 愿景和范围文档第二部分 | manual | 0.4d | 2018-11-06 19:00 A | 2018-11-09 20:00 A | 78 | 100% |  |  |  |  | 陈铭阳 | 2h | 2h | 《愿景与范围文档》第二部分 |
| 81 | 1.4.1.1.4 | 愿景和范围文档第三部分 | manual | 0.4d | 2018-11-06 19:00 A | 2018-11-07 20:00 A | 78 | 100% |  |  |  |  | 蓝舒雯 | 2h | 2h | 《愿景与范围文档》第三部分 |
| 82 | 1.4.1.1.5 | 汇总并修改愿景与范围文档 |  | 0.4d | 2018-11-12 19:00 A | 2018-11-13 20:00 A | 79, 80, 81 | 100% |  |  |  | start no earlier than 2018-11-12 10:00 | 刘祺 | 2h | 2h | 《愿景与范围文档-初步》》 |
| 83 | 1.4.1.1.6 | 愿景与范围文档修改1 | manual | 0.2d | 2018-11-19 19:00 A | 2018-11-19 20:00 A | 82 | 100% |  |  |  |  | 刘祺 | 1h | 1h | 《愿景与范围文档-修订1》 |
| 84 | 1.4.1.1.7 | 愿景与范围文档修改2 | manual | 0.2d | 2018-12-05 19:00 | 2018-12-05 20:00 | 96, 83 |  |  |  |  |  | 赵佳锋 | 1h |  | 《愿景与范围文档-修订2》 |
| 85 | 1.4.1.2 | 编写用例文档 | manual | 0.4d | 2018-11-09 19:00 A | 2018-11-10 20:00 A |  | 100% |  |  |  |  | 赵唯皓 | 2h | 2h | 《用例文档》 |
| 86 | 1.4.1.3 | 绘制范围可视化表示--特性树 | manual | 0.4d | 2018-11-12 19:00 A | 2018-11-13 20:00 A | 82, 85 | 100% |  |  |  |  | 赵佳锋 | 2h | 2h | 《特性树》 |
| 87 | 1.4.1.4 | 绘制范围可视化表示--关联图 | manual | 0.6d | 2018-11-12 19:00 A | 2018-11-14 20:00 A | 82 | 100% |  |  |  |  | 蓝舒雯 | 3h | 3h | 《关联图》 |
| 88 | 1.4.1.5 | 绘制范围可视化表示--生态系统图 | manual | 0.4d | 2018-11-13 19:00 A | 2018-11-14 20:00 A | 82 | 100% |  |  |  |  | 赵唯皓 | 2h | 2h | 《生态系统图》 |
| 89 | 1.4.1.6 | 绘制范围可视化表示--事件列表 | manual | 0.2d | 2018-11-16 19:00 A | 2018-11-16 20:00 A | 82, 87, 88 | 100% |  |  |  |  | 赵佳锋 | 1h | 1h | 《事件列表》 |
| 90 | *.3.4 | 界面初步设计1 | manual | 0.2d | 2018-11-16 19:00 A | 2018-11-16 20:00 A | 85 | 100% |  |  |  |  | 陈铭阳 | 1h | 1h | 界面原型-初步1 |
| 91 | 1.4.1.8 | 界面初步设计2 | manual | 0.4d | 2018-11-19 19:00 A | 2018-11-20 20:00 A | 90 | 100% |  |  |  |  | 陈铭阳 | 2h | 2h | 界面原型-初步2 |
| 92 | 1.4.1.9 | 发送访谈邀请函 | manual | 0.2d | 2018-11-23 19:00 A | 2018-11-23 20:00 A | 91, 82, 86, 87, 88, 89, 85 | 100% |  |  |  |  | 刘祺 | 1h | 1h | 《邀请函》 |
| 93 | *.3.5 | 需求获取访谈1 | manual | 0.2d | 2018-11-25 09:00 A | 2018-11-25 10:00 A | 92 | 100% |  |  |  |  | 赵佳锋; 刘祺; 赵唯皓; 蓝舒雯 | 4h | 4h | 访谈记录 |
| 94 | 1.4.1.11 | web端的界面原型 | manual | 0.4d | 2018-11-26 19:30 A | 2018-11-28 19:30 A | 93 | 100% |  |  |  |  | 陈铭阳 | 2h | 2h | web端的界面原型 |
| 95 | 1.4.1.12 | 发送访谈2邀请函 | manual | 0.2d | 2018-12-02 19:00 A | 2018-12-02 20:00 A | 94 | 100% |  |  |  |  | 蓝舒雯 | 1h | 1h | 邀请函 |
| 96 | 1.4.1.13 | 需求访谈2 | manual | 0.2d | 2018-12-04 19:00 A | 2018-12-04 20:00 A | 95, 94 | 100% |  |  |  |  | 赵佳锋; 蓝舒雯; 刘祺; 陈铭阳; 赵唯皓 | 5h | 5h | 访谈记录 |
| 97 | 1.4.1.14 | web端的界面原型修改 | manual | 0.4d | 2018-12-07 19:00 A | 2018-12-08 20:00 A | 96 | 100% |  |  |  |  | 陈铭阳 | 2h | 2h | web端的界面原型修改 |
| 98 | 1.4.1.15 | 需求访谈3 | manual | 0.2d | 2018-11-05 19:00 | 2018-11-05 20:00 | 84, 97 |  |  |  |  |  | 赵佳锋; 蓝舒雯; 刘祺; 陈铭阳; 赵唯皓 | 5h |  |  |
| 99 | 1.4.1.16 | 用例图绘制1 | manual | 0.6d | 2018-12-10 19:00 | 2018-12-12 20:00 | 96 |  |  |  |  |  | 赵佳锋 | 3h |  | 用例图1 |
| 100 | 1.4.1.17 | 用例图绘制2 | manual | 0.4d | 2018-12-14 19:00 | 2018-12-15 20:00 | 99 |  |  |  |  |  | 赵佳锋 | 2h |  | 用例图2 |
| 101 | 1.4.1.18 | 修改界面原型1 | manual | 0.6d | 2018-12-10 19:00 | 2018-12-12 20:00 | 96 |  |  |  |  |  | 赵唯皓 | 3h |  | 界面原型1 |
| 102 | 1.4.1.19 | 修改界面原型2 | manual | 0.4d | 2018-12-14 19:00 | 2018-12-15 20:00 | 101 |  |  |  |  |  | 赵唯皓 | 2h |  | 界面原型2 |
| 103 | 1.4.1.20 | 制作问卷调查1 | manual | 0.6d | 2018-12-10 19:00 | 2018-12-12 20:00 | 96 |  |  |  |  |  | 蓝舒雯 | 3h |  | 调查问卷 |
| 104 | 1.4.1.21 | 发放问卷调查2 | manual | 0.4d | 2018-12-14 19:00 | 2018-12-15 20:00 | 103 |  |  |  |  |  | 蓝舒雯 | 2h |  | 问卷结果 |
| 105 | 1.4.1.22 | 检查问题报告1 | manual | 0.6d | 2018-12-10 19:00 | 2018-12-12 20:00 | 96 |  |  |  |  |  | 刘祺 | 3h |  | 《检查问题报告》 |
| 106 | 1.4.1.23 | 检查问题报告2 | manual | 0.4d | 2018-12-14 19:00 | 2018-12-15 20:00 | 105 |  |  |  |  |  | 刘祺 | 2h |  | 《检查问题报告》 |
| 107 | *.3.7 | 召开应用程序开发联系会议 | manual | 0.2d | 2018-12-16 08:00 A | 2018-12-16 09:00 | 106, 100, 102, 104 |  | 0.2d |  |  |  | 赵佳锋; 蓝舒雯; 刘祺; 赵唯皓; 陈铭阳 | 20h |  | 《会议总结分析》 |
| 108 | 1.4.1.25 | 需求重用 | manual | 0.8d | 2018-12-17 17:00 | 2018-12-17 21:00 | 107 |  |  |  |  |  | 赵佳锋 | 3h |  | 《需求重用说明》 |

| ID | WBS | Task | Type | Duration | Start | Finish | Predecessors | Complete | Remaining | Actual start | Resources | Work | Actual work | 最终交付物 |
| --- | --- | --- | --- | --- | --- | --- | --- | --- | --- | --- | --- | --- | --- | --- |
| 109 | 1.4.2 | **需求分析** |  | 9d | 2018-12-03 08:00 | 2018-12-28 20:00 | 76 |  |  |  |  | 33h |  |  |
| 110 | 1.4.2.1 | 创建开发原型 | manual | 0.4d | 2018-12-18 19:00 | 2018-12-19 20:00 | 108 |  |  |  | 陈铭阳 | 2h |  | 《开发原型》文档 |
| 111 | 1.4.2.2 | 分析可行性1 | manual | 0.4d | 2018-12-18 19:00 | 2018-12-19 20:00 | 108 |  |  |  | 赵唯皓 | 2h |  | 《需求可行性1》文档 |
| 112 | 1.4.2.3 | 分析可行性2 | manual | 0.4d | 2018-12-21 19:00 | 2018-12-22 20:00 | 111 |  |  |  | 赵唯皓 | 2h |  | 《需求可行性2》文档 |
| 113 | 1.4.2.4 | 确认需求优先级 | manual | 0.4d | 2018-12-18 19:00 | 2018-12-19 20:00 | 108 |  |  |  | 刘祺 | 2h |  | 《需求优先级1》文档 |
| 114 | 1.4.2.5 | 确认需求优先级2 | manual | 0.4d | 2018-12-21 19:00 | 2018-12-22 20:00 | 113 |  |  |  | 刘祺 | 2h |  | 《需求优先级2》文档 |
| 115 | 1.4.2.6 | 需求建模 | manual | 0.4d | 2018-12-18 19:00 | 2018-12-19 20:00 | 108 |  |  |  | 赵佳锋 | 2h |  | UML各种图和必要文档 |
| 116 | 1.4.2.7 | 需求建模2 | manual | 0.4d | 2018-12-21 19:00 | 2018-12-22 20:00 | 115 |  |  |  | 赵佳锋 | 2h |  | UML各种图和必要文档 |
| 117 | 1.4.2.8 | 编写数据字典 | manual | 0.4d | 2018-12-18 19:00 | 2018-12-19 20:00 | 108 |  |  |  | 蓝舒雯 | 2h |  | 《数据字典1》 |
| 118 | 1.4.2.9 | 编写数据字典2 | manual | 0.4d | 2018-12-21 19:00 | 2018-12-22 20:00 | 117 |  |  |  | 蓝舒雯 | 2h |  | 《数据字典2》 |
| 119 | 1.4.2.10 | 应用质量功能调配 | manual | 0.6d | 2018-12-23 09:00 | 2018-12-23 12:00 | 110, 112, 114, 116, 118 |  |  |  | 陈铭阳; 蓝舒雯; 刘祺; 赵佳锋; 赵唯皓 | 15h |  | 调配文档 |
| 120 | 1.4.3 | **需求规格说明** |  | 7.5d | 2018-12-01 19:00 | 2018-12-30 19:30 | 109 | 9% | 6.82d | 2018-12-03 19:00 |  | 30h | 2h |  |
| 121 | 1.4.3.1 | **采用需求规格说明模板** |  | 0.8d | 2018-12-03 19:00 | 2018-12-05 20:00 |  | 25% | 0.6d | 2018-12-07 19:00 |  | 8h | 2h |  |
| 122 | 1.4.3.1.1 | 《SRS》第1部分草稿 | manual | 0.4d | 2018-12-07 19:00 A | 2018-12-08 20:00 |  | 25% | 0.3d |  | 刘祺 | 2h | 0.5h | 《SRS》第1部分草稿 |
| 123 | 1.4.3.1.2 | 《SRS》第2部分草稿 | manual | 0.4d | 2018-12-07 19:00 A | 2018-12-08 20:00 |  | 25% | 0.3d |  | 赵佳锋 | 2h | 0.5h | 《SRS》第1部分草稿 |
| 124 | 1.4.3.1.3 | 《SRS》第3部分草稿 | manual | 0.4d | 2018-12-07 19:00 A | 2018-12-08 20:00 |  | 25% | 0.3d |  | 赵唯皓 | 2h | 0.5h | 《SRS》第1部分草稿 |
| 125 | 1.4.3.1.4 | 《SRS》第4部分草稿 | manual | 0.4d | 2018-12-07 19:00 A | 2018-12-08 20:00 |  | 25% | 0.3d |  | 蓝舒雯 | 2h | 0.5h | 《SRS》第1部分草稿 |
| 126 | 1.4.3.2 | 指明需求来源 | manual | 0.6d | 2018-12-24 19:00 | 2018-12-26 20:00 | 119 |  |  |  | 蓝舒雯 | 3h |  | 《需求来源》文档 |
| 127 | 1.4.3.3 | 为每一项需求注上标号 | manual | 0.6d | 2018-12-24 19:00 | 2018-12-26 20:00 | 119 |  |  |  | 赵唯皓 | 3h |  | 《会议纪要》 |
| 128 | 1.4.3.4 | 记录业务规范 | manual | 0.6d | 2018-12-24 19:00 | 2018-12-26 20:00 | 119 |  |  |  | 赵佳锋 | 3h |  | 《业务规范文档》 |
| 129 | 1.4.3.5 | 创建需求跟踪能力矩阵 | manual | 0.6d | 2018-12-24 19:00 | 2018-12-26 20:00 | 119 |  |  |  | 刘祺 | 3h |  | 《需求跟踪能力矩阵》 |
| 130 | 1.4.3.6 | 初定需求规格说明书 | manual | 0.4d | 2018-12-28 19:00 | 2018-12-29 20:00 | 122, 123, 124, 125, 126, 127, 128, 129 |  |  |  | 陈铭阳; 蓝舒雯; 刘祺; 赵佳锋; 赵唯皓 | 10h |  | 《需求规格说明书-初稿》 |
| 131 | 1.4.4 | **需求规格审核** |  | 6d | 2018-12-17 08:00 | 2018-12-31 20:00 | 120 |  |  |  |  | 47.33h |  |  |
| 132 | 1.4.4.1 | 审查并修订需求规格说明 | manual | 0.8d | 2018-12-31 17:00 | 2018-12-31 21:00 | 130 |  |  |  | 蓝舒雯; 陈铭阳; 刘祺; 赵佳锋; 赵唯皓 | 20h |  | 审查结果及《需求规格说明书》修订版1 |
| 133 | 1.4.4.2 | 编写测试用例 | manual | 1.2d | 2019-01-01 17:00 | 2019-01-01 23:00 | 132 |  |  |  | 陈铭阳; 刘祺 | 12h |  | 《测试用例文档初稿》 |
| 134 | 1.4.4.3 | 修订测试用例 | manual | 0.6d | 2019-01-02 17:00 | 2019-01-02 20:00 | 133, 132 |  |  |  | 蓝舒雯 | 3h |  | 《测试用例文档终稿》 |
| 135 | 1.4.4.4 | 编写用户手册 | manual | 1.2d | 2019-01-01 17:00 | 2019-01-01 23:00 | 132 |  |  |  | 赵佳锋; 赵唯皓 | 12h |  | 《用户手册初稿》 |
| 136 | 1.4.4.5 | 修订用户手册 | manual | 0.2d | 2019-01-02 20:00 | 2019-01-02 21:00 | 135, 132 |  |  |  | 蓝舒雯 | 0.33h |  | 《用户手册终稿》 |

| ID | WBS | Task | Type | Duration | Start | Finish | Predecessors | Complete | Remaining | Actual start | Constraint | Resources | Work | Actual work | 最终交付物 |
| --- | --- | --- | --- | --- | --- | --- | --- | --- | --- | --- | --- | --- | --- | --- | --- |
| 137 | 1.4.5 | **需求管理** |  | 9d | 2018-12-24 09:00 | 2019-01-04 11:00 |  |  |  |  |  |  | 78h |  |  |
| 138 | 1.4.5.1 | 建立变更控制委员会 | manual | 0.4d | 2019-01-03 18:00 | 2019-01-03 20:00 |  |  |  |  |  | 赵佳锋; 蓝舒雯; 刘祺; 陈铭阳; 赵唯皓 | 10h |  | 变更控制委员会成员信息 |
| 139 | 1.4.5.2 | 编写需求文档的基准版本和控制版本 | manual | 1.4d | 2019-01-04 16:00 | 2019-01-04 23:00 | 138 |  |  |  |  | 蓝舒雯; 陈铭阳; 刘祺; 赵佳锋; 赵唯皓 | 34h |  | 《需求文档的基准版和控制版》初稿 |
| 140 | 1.4.5.3 | 编写《需求变更控制文档》 | manual | 1.4d | 2019-01-05 16:00 | 2019-01-05 23:00 | 138 |  |  |  |  | 赵佳锋; 刘祺; 陈铭阳; 蓝舒雯; 赵唯皓 | 34h |  | 《需求变更管理-初稿》 |
| 141 | 1.5 | **项目控制** |  | 10.9d | 2018-11-09 19:00 | 2018-12-16 20:00 | 75 | 55% | 4.87d | 2018-09-27 19:00 |  |  | 90.17h | 51h |  |
| 142 | 1.5.1 | **团建** |  | 0.1d | 2018-10-07 19:00 A | 2018-10-07 20:00 A |  | 100% |  |  |  |  | 5h | 5h |  |
| 143 | 1.5.1.1 | 第一次团建 | manual | 0.2d | 2018-10-07 19:00 A | 2018-10-07 20:00 A | 3 | 100% |  |  |  | 赵佳锋; 蓝舒雯; 刘祺; 陈铭阳; 赵唯皓 | 5h | 5h | 团建记录 |
| 144 | 1.5.2 | **小组例会** |  | 23.8d | 2018-09-27 19:00 A | 2019-01-04 20:00 |  | 64% | 8.57d |  |  |  | 62.5h | 40h |  |
| 145 | 1.5.2.1 | G12-第1次例会（常规） | manual | 0.1d | 2018-09-27 19:00 A | 2018-09-28 19:30 A |  | 100% |  |  |  | 赵佳锋; 蓝舒雯; 刘祺; 陈铭阳; 赵唯皓 | 2.5h | 2.5h | 《会议纪要》 |
| 146 | 1.5.2.2 | G12-第2次例会（常规） | manual | 0.1d | 2018-10-11 19:00 A | 2018-10-11 19:30 A | 145 | 100% |  |  |  | 赵佳锋; 蓝舒雯; 刘祺; 陈铭阳; 赵唯皓 | 2.5h | 2.5h | 《会议纪要》 |
| 147 | 1.5.2.3 | G12-第3次例会（常规） | manual | 0.1d | 2018-10-18 19:00 A | 2018-10-18 19:30 A | 146 | 100% |  |  |  | 赵佳锋; 蓝舒雯; 刘祺; 陈铭阳; 赵唯皓 | 2.5h | 2.5h | 《会议纪要》 |
| 148 | 1.5.2.4 | G12-第4次例会（常规） | manual | 0.1d | 2018-10-25 19:00 A | 2018-10-25 19:30 A | 147 | 100% |  |  |  | 赵佳锋; 蓝舒雯; 刘祺; 陈铭阳; 赵唯皓 | 2.5h | 2.5h | 《会议纪要》 |
| 149 | 1.5.2.5 | G12-第5次例会（常规） | manual | 0.1d | 2018-11-01 19:00 A | 2018-11-01 19:30 A | 148 | 100% |  |  |  | 赵佳锋; 蓝舒雯; 刘祺; 陈铭阳; 赵唯皓 | 2.5h | 2.5h | 《会议纪要》 |
| 150 | 1.5.2.6 | G12-第6次例会（常规） | manual | 0.1d | 2018-11-08 19:00 A | 2018-11-15 19:30 A | 149 | 100% |  |  | start no earlier than 2018-11-08 19:00 | 赵佳锋; 蓝舒雯; 刘祺; 陈铭阳; 赵唯皓 | 2.5h | 2.5h | 《会议纪要》 |
| 151 | 1.5.2.7 | G12-第7次例会（常规） | manual | 0.1d | 2018-11-15 19:00 A | 2018-11-15 19:30 A | 150 | 100% |  |  |  | 赵佳锋; 蓝舒雯; 刘祺; 陈铭阳; 赵唯皓 | 2.5h | 2.5h | 《会议纪要》 |
| 152 | 1.5.2.8 | G12-第8次例会（临时） | manual | 0.2d | 2018-11-19 13:00 A | 2018-11-19 14:00 A | 151 | 100% |  |  |  | 赵佳锋; 蓝舒雯; 刘祺; 陈铭阳; 赵唯皓 | 5h | 5h | 《会议纪要》 |
| 153 | 1.5.2.9 | G12-第9次例会（常规） | manual | 0.1d | 2018-11-22 19:00 A | 2018-11-22 19:30 A | 152 | 100% |  |  |  | 赵佳锋; 蓝舒雯; 刘祺; 陈铭阳; 赵唯皓 | 2.5h | 2.5h | 《会议纪要》 |
| 154 | 1.5.2.10 | G12-第10次例会（常规） | manual | 0.1d | 2018-11-29 19:00 A | 2018-11-29 19:30 A | 153 | 100% |  |  |  | 赵佳锋; 蓝舒雯; 刘祺; 陈铭阳; 赵唯皓 | 2.5h | 2.5h | 《会议纪要》 |
| 155 | 1.5.2.11 | G12-第11次例会（临时） | manual | 0.4d | 2018-12-01 10:00 A | 2018-12-01 20:00 A | 154 | 100% |  |  |  | 赵佳锋; 蓝舒雯; 刘祺; 陈铭阳; 赵唯皓 | 10h | 10h | 访谈问题，《会议纪要》 |
| 156 | 1.5.2.12 | G12-第12次例会（常规） | manual | 0.1d | 2018-12-06 19:00 A | 2018-12-06 19:30 A | 155 | 100% |  |  |  | 赵佳锋; 蓝舒雯; 刘祺; 陈铭阳; 赵唯皓 | 2.5h | 2.5h | 《会议纪要》 |
| 157 | 1.5.2.13 | G12-第13次例会（常规） | manual | 0.2d | 2018-12-13 19:00 A | 2018-12-13 20:00 | 156 |  | 0.2d |  |  | 赵佳锋; 蓝舒雯; 刘祺; 陈铭阳; 赵唯皓 | 5h |  | 《会议纪要》 |
| 158 | 1.5.2.14 | G12-第14次例会（常规） | manual | 0.1d | 2018-12-20 19:00 | 2018-12-20 19:30 | 157 |  |  |  |  | 赵佳锋; 蓝舒雯; 刘祺; 陈铭阳; 赵唯皓 | 2.5h |  | 《会议纪要》 |
| 159 | 1.5.2.15 | G12-第15次例会（常规） | manual | 0.2d | 2018-12-27 19:00 | 2018-12-27 20:00 | 158 |  |  |  |  | 赵佳锋; 蓝舒雯; 刘祺; 陈铭阳; 赵唯皓 | 5h |  | 《会议纪要》 |
| 160 | 1.5.2.16 | G12-第16次例会（常规） | manual | 0.4d | 2019-01-07 18:00 | 2019-01-07 20:00 | 159 |  |  |  |  |  | 10h |  |  |

| ID | WBS | Task | Type | Duration | Start | Finish | Predecessors | Complete | Remaining | Actual start | Total slack | Constraint | Resources | Work | Actual work | 最终交付物 |
| --- | --- | --- | --- | --- | --- | --- | --- | --- | --- | --- | --- | --- | --- | --- | --- | --- |
| 161 | 1.5.3 | **过程评审** |  | 20.1d | 2018-11-11 11:00 A | 2019-01-09 22:00 |  | 27% | 14.62d |  | 0d |  |  | 22.67h | 6h |  |
| 162 | 1.5.3.1 | **需求工程项目计划评审** |  | 11.5d | 2018-11-11 11:00 | 2018-12-13 11:00 |  | 60% | 4.6d | 2018-11-29 15:00 |  |  |  | 11h | 6h |  |
| 163 | 1.5.3.1.1 | 需求计划评审第一次 | manual | 0.3d | 2018-11-29 15:00 A | 2018-11-29 16:30 A | 51, 68, 73 | 100% |  |  |  |  | 赵佳锋; 蓝舒雯; 陈铭阳; 赵唯皓 | 6h | 6h | 评审结果及修改文档 |
| 164 | 1.5.3.1.2 | 需求计划评审（重评） | milestone, manual | 0.2d | 2018-12-12 19:00 | 2018-12-12 20:00 | 163, 69, 74, 156, 53 |  |  |  |  |  | 赵佳锋; 蓝舒雯; 刘祺; 陈铭阳; 赵唯皓 | 5h |  | 评审结果及修改文档 |
| 165 | 1.5.3.2 | 需求规格说明文档评审 | milestone, manual | 0.4d | 2019-01-06 18:00 | 2019-01-06 20:00 | 132, 134, 136 |  |  |  |  | start no earlier than 2019-01-06 18:00 | 赵佳锋; 蓝舒雯; 刘祺; 陈铭阳; 赵唯皓 | 10h |  | 《评审结果及修改内容要求 |
| 166 | 1.5.3.3 | 需求变更控制文档评审 | milestone, manual | 0.2d | 2019-01-09 21:00 | 2019-01-09 22:00 | 139, 140 |  |  |  |  |  | 赵佳锋; 蓝舒雯; 刘祺; 陈铭阳; 赵唯皓 | 1.67h |  | 《评审结果及修改内容要求 |
| 167 | 1.6 | **项目收尾** |  | 10.2d | 2018-12-21 19:00 | 2019-01-10 20:00 | 141 |  |  |  |  |  |  | 43.5h |  |  |
| 168 | 1.6.1 | 整合已完成文档 | manual | 0.6d | 2019-01-10 19:00 | 2019-01-10 22:00 | 165, 166, 164 |  |  |  |  |  | 赵佳锋; 蓝舒雯; 刘祺; 陈铭阳; 赵唯皓 | 14h |  | 《项目总结报告》 |
| 169 | 1.6.2 | 编写项目总结报告 | manual | 0.6d | 2019-01-11 19:00 | 2019-01-11 22:00 | 168 |  |  |  |  |  |  | 2h |  |  |
| 170 | 1.6.3 | 制作项目总结报告PPT-1 | manual | 0.4d | 2019-01-12 19:00 | 2019-01-12 21:00 | 169 |  |  |  |  |  | 蓝舒雯; 赵唯皓 | 4h |  | 最终评审PPT |
| 171 | 1.6.4 | 最终评审 | milestone, manual | 0.2d | 2019-01-13 19:00 | 2019-01-13 20:00 | 170 |  |  |  |  |  | 赵佳锋; 蓝舒雯; 刘祺; 陈铭阳; 赵唯皓 | 5h |  | 评审结果 |
| 172 | 1.6.5 | 按评审要求修改需提交的文档并提交 | manual | 0.2d | 2019-01-14 19:00 | 2019-01-14 20:00 | 171 |  |  |  |  |  | 陈铭阳; 蓝舒雯; 刘祺; 赵佳锋; 赵唯皓 | 3.5h |  | 整理的需提交的最终所有文档 |
| 173 | 1.6.6 | 散伙饭 | manual | 0.6d | 2019-01-15 18:00 | 2019-01-15 21:00 | 172 |  |  |  |  |  | 赵佳锋; 蓝舒雯; 刘祺; 陈铭阳; 赵唯皓 | 15h |  |  |
